| start | leveling_delay_units | name | wbs | constraint_type | critical | priority | duration | remaining_duration | early_start | early_finish | late_start | late_finish | unique_id | summary | created | notes | outline_number | fixed_cost_accrual | leveling_can_split | level_assignments | text29 | ignore_resource_calendar | guid | active | baseline_fixed_cost_accrual | scheduled_duration | scheduled_finish | scheduled_start | recalc_outline_codes | finish | auto_compute_actuals | id | outline_level | task_calendar_guid | parent_task_unique_id | calendar_unique_id | successors | finish_slack | work_splits | constraint_date | total_slack | predecessors | start_slack | summary_progress | free_slack | milestone |
| --- | --- | --- | --- | --- | --- | --- | --- | --- | --- | --- | --- | --- | --- | --- | --- | --- | --- | --- | --- | --- | --- | --- | --- | --- | --- | --- | --- | --- | --- | --- | --- | --- | --- | --- | --- | --- | --- | --- | --- | --- | --- | --- | --- | --- | --- | --- |
| 2025-10-20T08:00:00.0 | ed | EP6029 | 0 | AS_SOON_AS_POSSIBLE | True | 500 | 5443200 | 5443200 | 2025-10-20T08:00:00.0 | 2026-07-09T17:00:00.0 | 2025-10-20T08:00:00.0 | 2026-07-09T17:00:00.0 | 0 | True | 2025-10-20T08:00:00.0 | 專案預覽 | 0 | PRORATED | True | True | Program | True | 20b32276-92ad-f011-8312-3c219cc9efd1 | True | PRORATED | 5443200 | 2026-07-09T17:00:00.0 | 2025-10-20T08:00:00.0 | True | 2026-07-09T17:00:00.0 | True |  |  |  |  |  |  |  |  |  |  |  |  |  |  |  |
| 2025-10-20T08:00:00.0 | ed | ODM board | 1 | AS_SOON_AS_POSSIBLE | True | 500 | 5068800 | 5068800 | 2025-10-20T08:00:00.0 | 2026-07-09T17:00:00.0 | 2025-10-20T08:00:00.0 | 2026-07-09T17:00:00.0 | 1 | True | 2025-10-20T08:00:00.0 | 專案預覽 | 1 | PRORATED | True | True | Program | True | 21b32276-92ad-f011-8312-3c219cc9efd1 | True | PRORATED | 5068800 | 2026-07-09T17:00:00.0 | 2025-10-20T08:00:00.0 | True | 2026-07-09T17:00:00.0 | True | 1 | 1 | bcb32276-92ad-f011-8312-3c219cc9efd1 | 0 | 2 |  |  |  |  |  |  |  |  |  |  |
| 2025-10-20T08:00:00.0 | ed | P0/P1-Planning Phase | 1.1 | AS_SOON_AS_POSSIBLE | True | 500 | 115200 | 115200 | 2025-10-20T08:00:00.0 | 2025-10-23T17:00:00.0 | 2025-10-20T08:00:00.0 | 2025-10-28T08:00:00.0 | 2 | True | 2025-10-20T08:00:00.0 |  | 1.1 | PRORATED | True | True | Phase | True | 22b32276-92ad-f011-8312-3c219cc9efd1 | True | PRORATED | 115200 | 2025-10-23T17:00:00.0 | 2025-10-20T08:00:00.0 | True | 2025-10-23T17:00:00.0 | True | 2 | 2 | bcb32276-92ad-f011-8312-3c219cc9efd1 | 1 | 2 | 11 2 16 FS | 28800 |  |  |  |  |  |  |  |  |
| 2025-10-20T08:00:00.0 | ed | Kick-off | 1.1.1 | AS_SOON_AS_POSSIBLE | True | 500 | 115200 | 115200 | 2025-10-20T08:00:00.0 | 2025-10-23T17:00:00.0 | 2025-10-20T08:00:00.0 | 2025-10-28T08:00:00.0 | 3 | True | 2025-10-20T08:00:00.0 |  | 1.1.1 | PRORATED | True | True | Phase | True | 23b32276-92ad-f011-8312-3c219cc9efd1 | True | PRORATED | 115200 | 2025-10-23T17:00:00.0 | 2025-10-20T08:00:00.0 | True | 2025-10-23T17:00:00.0 | True | 3 | 3 | bcb32276-92ad-f011-8312-3c219cc9efd1 | 2 | 2 |  | 28800 |  |  |  |  |  |  |  |  |
| 2025-10-20T08:00:00.0 | ed | Project Application Form[開案簽擬單](QD4-060/065),Board Project Specification(Preliminary)(QD4-073/092),New Product Market Evaluation Report[新產品市場評估報告](QD4-007),Project Budget Table[專案預算表](QD4-034)(PM) | 1.1.1.1 | AS_SOON_AS_POSSIBLE | True | 500 | 57600 | 57600 | 2025-10-20T08:00:00.0 | 2025-10-21T17:00:00.0 | 2025-10-20T08:00:00.0 | 2025-10-21T17:00:00.0 | 4 |  | 2025-10-20T08:00:00.0 |  | 1.1.1.1 | PRORATED | True | True | Task | True | 24b32276-92ad-f011-8312-3c219cc9efd1 | True | PRORATED | 57600 | 2025-10-21T17:00:00.0 | 2025-10-20T08:00:00.0 | True | 2025-10-21T17:00:00.0 | True | 4 | 4 | bcb32276-92ad-f011-8312-3c219cc9efd1 | 3 | 2 | 1 4 5 FS, 2 4 6 FS, 102 4 104 FS, 107 4 114 -57600 FS |  | 2025-10-20T08:00:00.0 2025-10-20T17:00:00.0 |  |  |  |  |  |  |  |
| 2025-10-22T08:00:00.0 | ed | Kick off Meeting(QD4-021)(PM) | 1.1.1.2 | START_NO_EARLIER_THAN |  | 500 | 28800 | 28800 | 2025-10-22T08:00:00.0 | 2025-10-22T17:00:00.0 | 2025-10-23T08:00:00.0 | 2025-10-27T08:00:00.0 | 5 |  | 2025-10-20T08:00:00.0 |  | 1.1.1.2 | PRORATED | True | True | Task | True | 25b32276-92ad-f011-8312-3c219cc9efd1 | True | PRORATED | 28800 | 2025-10-22T17:00:00.0 | 2025-10-22T08:00:00.0 | True | 2025-10-22T17:00:00.0 | True | 5 | 4 | bcb32276-92ad-f011-8312-3c219cc9efd1 | 3 | 2 | 3 5 7 FS, 4 5 9 FS, 5 5 10 FS, 6 5 11 FS, 7 5 12 FS, 8 5 13 FS, 9 5 14 FS, 10 5 15 FS | 28800 |  | 2025-10-22T08:00:00.0 | 28800 | 1 4 5 FS | 28800 | 2025-10-21T17:00:00.0 |  |  |
| 2025-10-22T08:00:00.0 | ed | Establish GBM(PM) | 1.1.1.3 | START_NO_EARLIER_THAN |  | 500 | 28800 | 28800 | 2025-10-22T08:00:00.0 | 2025-10-22T17:00:00.0 | 2025-10-27T08:00:00.0 | 2025-10-28T08:00:00.0 | 6 |  | 2025-10-20T08:00:00.0 |  | 1.1.1.3 | PRORATED | True | True | Task | True | 26b32276-92ad-f011-8312-3c219cc9efd1 | True | PRORATED | 28800 | 2025-10-22T17:00:00.0 | 2025-10-22T08:00:00.0 | True | 2025-10-22T17:00:00.0 | True | 6 | 4 | bcb32276-92ad-f011-8312-3c219cc9efd1 | 3 | 2 |  | 57600 |  | 2025-10-22T08:00:00.0 | 57600 | 2 4 6 FS | 57600 | 2025-10-21T17:00:00.0 | 57600 |  |
| 2025-10-23T08:00:00.0 | ed | Single Board Project Development Schedule(Template 3)(QD4-080)(PM) | 1.1.1.4 | START_NO_EARLIER_THAN |  | 500 | 28800 | 28800 | 2025-10-23T08:00:00.0 | 2025-10-23T17:00:00.0 | 2025-10-27T08:00:00.0 | 2025-10-28T08:00:00.0 | 7 |  | 2025-10-20T08:00:00.0 |  | 1.1.1.4 | PRORATED | True | True | Task | True | 27b32276-92ad-f011-8312-3c219cc9efd1 | True | PRORATED | 28800 | 2025-10-23T17:00:00.0 | 2025-10-23T08:00:00.0 | True | 2025-10-23T17:00:00.0 | True | 7 | 4 | bcb32276-92ad-f011-8312-3c219cc9efd1 | 3 | 2 |  | 28800 |  | 2025-10-23T08:00:00.0 | 28800 | 3 5 7 FS | 28800 | 2025-10-22T17:00:00.0 | 28800 |  |
| 2025-10-23T08:00:00.0 | ed | Feasibility Evaluation | 1.1.2 | START_NO_EARLIER_THAN |  | 500 | 28800 | 28800 | 2025-10-23T08:00:00.0 | 2025-10-23T17:00:00.0 | 2025-10-27T08:00:00.0 | 2025-10-28T08:00:00.0 | 8 | True | 2025-10-20T08:00:00.0 |  | 1.1.2 | PRORATED | True | True | Phase | True | 28b32276-92ad-f011-8312-3c219cc9efd1 | True | PRORATED | 28800 | 2025-10-23T17:00:00.0 | 2025-10-23T08:00:00.0 | True | 2025-10-23T17:00:00.0 | True | 8 | 3 | bcb32276-92ad-f011-8312-3c219cc9efd1 | 2 | 2 |  | 28800 |  | 2025-10-23T08:00:00.0 | 28800 |  | 28800 |  | 28800 |  |
| 2025-10-23T08:00:00.0 | ed | Board Project Specification Feasibility Evaluation(QD4-073/092)(HW) | 1.1.2.1 | START_NO_EARLIER_THAN |  | 500 | 28800 | 28800 | 2025-10-23T08:00:00.0 | 2025-10-23T17:00:00.0 | 2025-10-27T08:00:00.0 | 2025-10-28T08:00:00.0 | 9 |  | 2025-10-20T08:00:00.0 |  | 1.1.2.1 | PRORATED | True | True | Task | True | 29b32276-92ad-f011-8312-3c219cc9efd1 | True | PRORATED | 28800 | 2025-10-23T17:00:00.0 | 2025-10-23T08:00:00.0 | True | 2025-10-23T17:00:00.0 | True | 9 | 4 | bcb32276-92ad-f011-8312-3c219cc9efd1 | 8 | 2 |  | 28800 |  | 2025-10-23T08:00:00.0 | 28800 | 4 5 9 FS | 28800 | 2025-10-23T08:00:00.0 | 28800 |  |
| 2025-10-23T08:00:00.0 | ed | Board Project Specification Feasibility Evaluation(QD4-073/092)(SW) | 1.1.2.2 | START_NO_EARLIER_THAN |  | 500 | 28800 | 28800 | 2025-10-23T08:00:00.0 | 2025-10-23T17:00:00.0 | 2025-10-27T08:00:00.0 | 2025-10-28T08:00:00.0 | 10 |  | 2025-10-20T08:00:00.0 |  | 1.1.2.2 | PRORATED | True | True | Task | True | 2ab32276-92ad-f011-8312-3c219cc9efd1 | True | PRORATED | 28800 | 2025-10-23T17:00:00.0 | 2025-10-23T08:00:00.0 | True | 2025-10-23T17:00:00.0 | True | 10 | 4 | bcb32276-92ad-f011-8312-3c219cc9efd1 | 8 | 2 |  | 28800 |  | 2025-10-23T08:00:00.0 | 28800 | 5 5 10 FS | 28800 | 2025-10-23T08:00:00.0 | 28800 |  |
| 2025-10-23T08:00:00.0 | ed | Board Project Specification Feasibility Evaluation(QD4-073/092)(BIOS) | 1.1.2.3 | START_NO_EARLIER_THAN |  | 500 | 28800 | 28800 | 2025-10-23T08:00:00.0 | 2025-10-23T17:00:00.0 | 2025-10-27T08:00:00.0 | 2025-10-28T08:00:00.0 | 11 |  | 2025-10-20T08:00:00.0 |  | 1.1.2.3 | PRORATED | True | True | Task | True | 2bb32276-92ad-f011-8312-3c219cc9efd1 | True | PRORATED | 28800 | 2025-10-23T17:00:00.0 | 2025-10-23T08:00:00.0 | True | 2025-10-23T17:00:00.0 | True | 11 | 4 | bcb32276-92ad-f011-8312-3c219cc9efd1 | 8 | 2 |  | 28800 |  | 2025-10-23T08:00:00.0 | 28800 | 6 5 11 FS | 28800 | 2025-10-23T08:00:00.0 | 28800 |  |
| 2025-10-23T08:00:00.0 | ed | Board Project Specification Feasibility Evaluation(QD4-073/092)(ARM SW) | 1.1.2.4 | START_NO_EARLIER_THAN |  | 500 | 28800 | 28800 | 2025-10-23T08:00:00.0 | 2025-10-23T17:00:00.0 | 2025-10-27T08:00:00.0 | 2025-10-28T08:00:00.0 | 12 |  | 2025-10-20T08:00:00.0 |  | 1.1.2.4 | PRORATED | True | True | Task | True | 2cb32276-92ad-f011-8312-3c219cc9efd1 | True | PRORATED | 28800 | 2025-10-23T17:00:00.0 | 2025-10-23T08:00:00.0 | True | 2025-10-23T17:00:00.0 | True | 12 | 4 | bcb32276-92ad-f011-8312-3c219cc9efd1 | 8 | 2 |  | 28800 |  | 2025-10-23T08:00:00.0 | 28800 | 7 5 12 FS | 28800 | 2025-10-23T08:00:00.0 | 28800 |  |
| 2025-10-23T08:00:00.0 | ed | Board Project Specification Feasibility Evaluation(QD4-073/092)(EC) | 1.1.2.5 | START_NO_EARLIER_THAN |  | 500 | 28800 | 28800 | 2025-10-23T08:00:00.0 | 2025-10-23T17:00:00.0 | 2025-10-27T08:00:00.0 | 2025-10-28T08:00:00.0 | 13 |  | 2025-10-20T08:00:00.0 |  | 1.1.2.5 | PRORATED | True | True | Task | True | 2db32276-92ad-f011-8312-3c219cc9efd1 | True | PRORATED | 28800 | 2025-10-23T17:00:00.0 | 2025-10-23T08:00:00.0 | True | 2025-10-23T17:00:00.0 | True | 13 | 4 | bcb32276-92ad-f011-8312-3c219cc9efd1 | 8 | 2 |  | 28800 |  | 2025-10-23T08:00:00.0 | 28800 | 8 5 13 FS | 28800 | 2025-10-23T08:00:00.0 | 28800 |  |
| 2025-10-23T08:00:00.0 | ed | Board Project Specification Feasibility Evaluation(QD4-073/092)(AE) | 1.1.2.6 | START_NO_EARLIER_THAN |  | 500 | 28800 | 28800 | 2025-10-23T08:00:00.0 | 2025-10-23T17:00:00.0 | 2025-10-27T08:00:00.0 | 2025-10-28T08:00:00.0 | 14 |  | 2025-10-20T08:00:00.0 |  | 1.1.2.6 | PRORATED | True | True | Task | True | 2eb32276-92ad-f011-8312-3c219cc9efd1 | True | PRORATED | 28800 | 2025-10-23T17:00:00.0 | 2025-10-23T08:00:00.0 | True | 2025-10-23T17:00:00.0 | True | 14 | 4 | bcb32276-92ad-f011-8312-3c219cc9efd1 | 8 | 2 |  | 28800 |  | 2025-10-23T08:00:00.0 | 28800 | 9 5 14 FS | 28800 | 2025-10-23T08:00:00.0 | 28800 |  |
| 2025-10-23T08:00:00.0 | ed | Board Project Specification Feasibility Evaluation(QD4-073/092)(DQV) | 1.1.2.7 | START_NO_EARLIER_THAN |  | 500 | 28800 | 28800 | 2025-10-23T08:00:00.0 | 2025-10-23T17:00:00.0 | 2025-10-27T08:00:00.0 | 2025-10-28T08:00:00.0 | 15 |  | 2025-10-20T08:00:00.0 |  | 1.1.2.7 | PRORATED | True | True | Task | True | 2fb32276-92ad-f011-8312-3c219cc9efd1 | True | PRORATED | 28800 | 2025-10-23T17:00:00.0 | 2025-10-23T08:00:00.0 | True | 2025-10-23T17:00:00.0 | True | 15 | 4 | bcb32276-92ad-f011-8312-3c219cc9efd1 | 8 | 2 |  | 28800 |  | 2025-10-23T08:00:00.0 | 28800 | 10 5 15 FS | 28800 | 2025-10-23T08:00:00.0 | 28800 |  |
| 2025-10-27T17:00:00.0 | ed | C1 PDC Check(PDC) | 1.2 | START_NO_EARLIER_THAN | True | 500 |  |  | 2025-10-27T17:00:00.0 | 2025-10-27T17:00:00.0 | 2025-10-28T08:00:00.0 | 2025-10-28T08:00:00.0 | 16 |  | 2025-10-20T08:00:00.0 |  | 1.2 | PRORATED | True | True | Gate | True | 30b32276-92ad-f011-8312-3c219cc9efd1 | True | PRORATED |  | 2025-10-27T17:00:00.0 | 2025-10-27T17:00:00.0 | True | 2025-10-27T17:00:00.0 | True | 16 | 2 | bcb32276-92ad-f011-8312-3c219cc9efd1 | 1 | 2 | 14 16 19 FS |  |  | 2025-10-27T17:00:00.0 |  | 11 2 16 FS, 12 113 16 FS, 13 103 16 FS |  | 2025-10-27T17:00:00.0 |  | True |
| 2025-10-28T08:00:00.0 | ed | P2-EVT Phase | 1.3 | START_NO_EARLIER_THAN | True | 500 | 2102400 | 2102400 | 2025-10-28T08:00:00.0 | 2026-02-09T17:00:00.0 | 2025-10-28T08:00:00.0 | 2026-07-09T17:00:00.0 | 17 | True | 2025-10-20T08:00:00.0 |  | 1.3 | PRORATED | True | True | Phase | True | 31b32276-92ad-f011-8312-3c219cc9efd1 | True | PRORATED | 2102400 | 2026-02-09T17:00:00.0 | 2025-10-28T08:00:00.0 | True | 2026-02-09T17:00:00.0 | True | 17 | 2 | bcb32276-92ad-f011-8312-3c219cc9efd1 | 1 | 2 |  | 2822400 |  | 2025-10-28T08:00:00.0 |  |  |  |  |  |  |
| 2025-10-28T08:00:00.0 | ed | EVT Design | 1.3.1 | START_NO_EARLIER_THAN | True | 500 | 806400 | 806400 | 2025-10-28T08:00:00.0 | 2025-12-04T17:00:00.0 | 2025-10-28T08:00:00.0 | 2025-12-05T08:00:00.0 | 18 | True | 2025-10-20T08:00:00.0 |  | 1.3.1 | PRORATED | True | True | Phase | True | 32b32276-92ad-f011-8312-3c219cc9efd1 | True | PRORATED | 806400 | 2025-12-04T17:00:00.0 | 2025-10-28T08:00:00.0 | True | 2025-12-04T17:00:00.0 | True | 18 | 3 | bcb32276-92ad-f011-8312-3c219cc9efd1 | 17 | 2 | 22 18 28 FS, 23 18 29 FS |  |  | 2025-10-28T08:00:00.0 |  |  |  |  |  |  |
| 2025-10-28T08:00:00.0 | ed | Circuit Diagram Design[電路圖設計](HW) | 1.3.1.1 | START_NO_EARLIER_THAN | True | 500 | 288000 | 288000 | 2025-10-28T08:00:00.0 | 2025-11-10T17:00:00.0 | 2025-10-28T08:00:00.0 | 2025-11-11T08:00:00.0 | 19 |  | 2025-10-20T08:00:00.0 |  | 1.3.1.1 | PRORATED | True | True | Task | True | 33b32276-92ad-f011-8312-3c219cc9efd1 | True | PRORATED | 288000 | 2025-11-10T17:00:00.0 | 2025-10-28T08:00:00.0 | True | 2025-11-10T17:00:00.0 | True | 19 | 4 | bcb32276-92ad-f011-8312-3c219cc9efd1 | 18 | 2 | 15 19 20 FS, 16 19 21 FS, 17 19 22 FS |  |  | 2025-10-28T08:00:00.0 |  | 14 16 19 FS |  | 2025-10-28T08:00:00.0 |  |  |
| 2025-11-11T08:00:00.0 | ed | Schematics Review(HW) | 1.3.1.2 | START_NO_EARLIER_THAN |  | 500 | 144000 | 144000 | 2025-11-11T08:00:00.0 | 2025-11-17T17:00:00.0 | 2025-11-28T08:00:00.0 | 2025-12-05T08:00:00.0 | 20 |  | 2025-10-20T08:00:00.0 |  | 1.3.1.2 | PRORATED | True | True | Task | True | 34b32276-92ad-f011-8312-3c219cc9efd1 | True | PRORATED | 144000 | 2025-11-17T17:00:00.0 | 2025-11-11T08:00:00.0 | True | 2025-11-17T17:00:00.0 | True | 20 | 4 | bcb32276-92ad-f011-8312-3c219cc9efd1 | 18 | 2 |  | 374400 |  | 2025-11-11T08:00:00.0 | 374400 | 15 19 20 FS | 374400 | 2025-11-10T17:00:00.0 | 374400 |  |
| 2025-11-11T08:00:00.0 | ed | Layout Placement(HW) | 1.3.1.3 | START_NO_EARLIER_THAN | True | 500 | 144000 | 144000 | 2025-11-11T08:00:00.0 | 2025-11-17T17:00:00.0 | 2025-11-11T08:00:00.0 | 2025-11-18T08:00:00.0 | 21 |  | 2025-10-20T08:00:00.0 |  | 1.3.1.3 | PRORATED | True | True | Task | True | 35b32276-92ad-f011-8312-3c219cc9efd1 | True | PRORATED | 144000 | 2025-11-17T17:00:00.0 | 2025-11-11T08:00:00.0 | True | 2025-11-17T17:00:00.0 | True | 21 | 4 | bcb32276-92ad-f011-8312-3c219cc9efd1 | 18 | 2 | 18 21 23 FS, 19 21 24 FS, 20 21 25 FS |  |  | 2025-11-11T08:00:00.0 |  | 16 19 21 FS |  | 2025-11-10T17:00:00.0 |  |  |
| 2025-11-11T08:00:00.0 | ed | Layout Placement Feasibility Confirmation(ME) | 1.3.1.4 | START_NO_EARLIER_THAN |  | 500 | 144000 | 144000 | 2025-11-11T08:00:00.0 | 2025-11-17T17:00:00.0 | 2025-11-28T08:00:00.0 | 2025-12-05T08:00:00.0 | 22 |  | 2025-10-20T08:00:00.0 |  | 1.3.1.4 | PRORATED | True | True | Task | True | 36b32276-92ad-f011-8312-3c219cc9efd1 | True | PRORATED | 144000 | 2025-11-17T17:00:00.0 | 2025-11-11T08:00:00.0 | True | 2025-11-17T17:00:00.0 | True | 22 | 4 | bcb32276-92ad-f011-8312-3c219cc9efd1 | 18 | 2 | 108 22 117 FS, 109 22 118 FS, 110 22 119 FS, 111 22 120 FS, 112 22 121 FS | 374400 |  | 2025-11-11T08:00:00.0 | 374400 | 17 19 22 FS | 374400 | 2025-11-10T17:00:00.0 |  |  |
| 2025-11-18T08:00:00.0 | ed | PCBA Pre BOM Release(HW) | 1.3.1.5 | START_NO_EARLIER_THAN |  | 500 | 28800 | 28800 | 2025-11-18T08:00:00.0 | 2025-11-18T17:00:00.0 | 2025-12-04T08:00:00.0 | 2025-12-05T08:00:00.0 | 23 |  | 2025-10-20T08:00:00.0 |  | 1.3.1.5 | PRORATED | True | True | Task | True | 37b32276-92ad-f011-8312-3c219cc9efd1 | True | PRORATED | 28800 | 2025-11-18T17:00:00.0 | 2025-11-18T08:00:00.0 | True | 2025-11-18T17:00:00.0 | True | 23 | 4 | bcb32276-92ad-f011-8312-3c219cc9efd1 | 18 | 2 |  | 345600 |  | 2025-11-18T08:00:00.0 | 345600 | 18 21 23 FS | 345600 | 2025-11-17T17:00:00.0 | 345600 |  |
| 2025-11-18T08:00:00.0 | ed | PCB Layout Review(HW) | 1.3.1.6 | START_NO_EARLIER_THAN |  | 500 | 345600 | 345600 | 2025-11-18T08:00:00.0 | 2025-12-03T17:00:00.0 | 2025-11-19T08:00:00.0 | 2025-12-05T08:00:00.0 | 24 |  | 2025-10-20T08:00:00.0 |  | 1.3.1.6 | PRORATED | True | True | Task | True | 38b32276-92ad-f011-8312-3c219cc9efd1 | True | PRORATED | 345600 | 2025-12-03T17:00:00.0 | 2025-11-18T08:00:00.0 | True | 2025-12-03T17:00:00.0 | True | 24 | 4 | bcb32276-92ad-f011-8312-3c219cc9efd1 | 18 | 2 |  | 28800 |  | 2025-11-18T08:00:00.0 | 28800 | 19 21 24 FS | 28800 | 2025-11-17T17:00:00.0 | 28800 |  |
| 2025-11-18T08:00:00.0 | ed | Layout and Gerber out(HW) | 1.3.1.7 | START_NO_EARLIER_THAN | True | 500 | 345600 | 345600 | 2025-11-18T08:00:00.0 | 2025-12-03T17:00:00.0 | 2025-11-18T08:00:00.0 | 2025-12-04T08:00:00.0 | 25 |  | 2025-10-20T08:00:00.0 |  | 1.3.1.7 | PRORATED | True | True | Task | True | 39b32276-92ad-f011-8312-3c219cc9efd1 | True | PRORATED | 345600 | 2025-12-03T17:00:00.0 | 2025-11-18T08:00:00.0 | True | 2025-12-03T17:00:00.0 | True | 25 | 4 | bcb32276-92ad-f011-8312-3c219cc9efd1 | 18 | 2 | 21 25 26 FS |  |  | 2025-11-18T08:00:00.0 |  | 20 21 25 FS |  | 2025-11-17T17:00:00.0 |  |  |
| 2025-12-04T08:00:00.0 | ed | PCBA Preliminary BOM(HW) | 1.3.1.8 | START_NO_EARLIER_THAN | True | 500 | 28800 | 28800 | 2025-12-04T08:00:00.0 | 2025-12-04T17:00:00.0 | 2025-12-04T08:00:00.0 | 2025-12-05T08:00:00.0 | 26 |  | 2025-10-20T08:00:00.0 |  | 1.3.1.8 | PRORATED | True | True | Task | True | 3ab32276-92ad-f011-8312-3c219cc9efd1 | True | PRORATED | 28800 | 2025-12-04T17:00:00.0 | 2025-12-04T08:00:00.0 | True | 2025-12-04T17:00:00.0 | True | 26 | 4 | bcb32276-92ad-f011-8312-3c219cc9efd1 | 18 | 2 |  |  |  | 2025-12-04T08:00:00.0 |  | 21 25 26 FS |  | 2025-12-03T17:00:00.0 |  |  |
| 2025-12-05T08:00:00.0 | ed | EVT Sample | 1.3.2 | START_NO_EARLIER_THAN | True | 500 | 345600 | 345600 | 2025-12-05T08:00:00.0 | 2025-12-22T17:00:00.0 | 2025-12-05T08:00:00.0 | 2026-07-09T17:00:00.0 | 27 | True | 2025-10-20T08:00:00.0 |  | 1.3.2 | PRORATED | True | True | Phase | True | 3bb32276-92ad-f011-8312-3c219cc9efd1 | True | PRORATED | 345600 | 2025-12-22T17:00:00.0 | 2025-12-05T08:00:00.0 | True | 2025-12-22T17:00:00.0 | True | 27 | 3 | bcb32276-92ad-f011-8312-3c219cc9efd1 | 17 | 2 |  | 3772800 |  | 2025-12-05T08:00:00.0 |  |  |  |  |  |  |
| 2025-12-05T08:00:00.0 | ed | EVT Sample Request(HW) | 1.3.2.1 | START_NO_EARLIER_THAN | True | 500 | 28800 | 28800 | 2025-12-05T08:00:00.0 | 2025-12-05T17:00:00.0 | 2025-12-05T08:00:00.0 | 2025-12-08T08:00:00.0 | 28 |  | 2025-10-20T08:00:00.0 |  | 1.3.2.1 | PRORATED | True | True | Task | True | 3cb32276-92ad-f011-8312-3c219cc9efd1 | True | PRORATED | 28800 | 2025-12-05T17:00:00.0 | 2025-12-05T08:00:00.0 | True | 2025-12-05T17:00:00.0 | True | 28 | 4 | bcb32276-92ad-f011-8312-3c219cc9efd1 | 27 | 2 | 24 28 30 FS |  |  | 2025-12-05T08:00:00.0 |  | 22 18 28 FS |  | 2025-12-05T08:00:00.0 |  |  |
| 2025-12-05T08:00:00.0 | ed | Electronic Parts Evaluation Form(PUR) | 1.3.2.2 | START_NO_EARLIER_THAN |  | 500 | 57600 | 57600 | 2025-12-05T08:00:00.0 | 2025-12-08T17:00:00.0 | 2026-07-08T08:00:00.0 | 2026-07-09T17:00:00.0 | 29 |  | 2025-10-20T08:00:00.0 |  | 1.3.2.2 | PRORATED | True | True | Task | True | 3db32276-92ad-f011-8312-3c219cc9efd1 | True | PRORATED | 57600 | 2025-12-08T17:00:00.0 | 2025-12-05T08:00:00.0 | True | 2025-12-08T17:00:00.0 | True | 29 | 4 | bcb32276-92ad-f011-8312-3c219cc9efd1 | 27 | 2 |  | 4060800 |  | 2025-12-05T08:00:00.0 | 4060800 | 23 18 29 FS | 4060800 | 2025-12-05T08:00:00.0 | 4060800 |  |
| 2025-12-08T08:00:00.0 | ed | EVT Material Preparation and EVT Sample Completed(PC) | 1.3.2.3 | START_NO_EARLIER_THAN | True | 500 | 316800 | 316800 | 2025-12-08T08:00:00.0 | 2025-12-22T17:00:00.0 | 2025-12-08T08:00:00.0 | 2025-12-23T08:00:00.0 | 30 |  | 2025-10-20T08:00:00.0 |  | 1.3.2.3 | PRORATED | True | True | Task | True | 3eb32276-92ad-f011-8312-3c219cc9efd1 | True | PRORATED | 316800 | 2025-12-22T17:00:00.0 | 2025-12-08T08:00:00.0 | True | 2025-12-22T17:00:00.0 | True | 30 | 4 | bcb32276-92ad-f011-8312-3c219cc9efd1 | 27 | 2 | 25 30 32 FS, 26 30 33 FS, 27 30 34 FS, 28 30 35 FS, 29 30 36 FS, 30 30 37 172800 FS, 31 30 38 172800 FS |  |  | 2025-12-08T08:00:00.0 |  | 24 28 30 FS |  | 2025-12-05T17:00:00.0 |  |  |
| 2025-12-23T08:00:00.0 | ed | EVT Tests | 1.3.3 | START_NO_EARLIER_THAN | True | 500 | 489600 | 489600 | 2025-12-23T08:00:00.0 | 2026-01-16T17:00:00.0 | 2025-12-26T08:00:00.0 | 2026-01-19T08:00:00.0 | 31 | True | 2025-10-20T08:00:00.0 |  | 1.3.3 | PRORATED | True | True | Phase | True | 3fb32276-92ad-f011-8312-3c219cc9efd1 | True | PRORATED | 489600 | 2026-01-16T17:00:00.0 | 2025-12-23T08:00:00.0 | True | 2026-01-16T17:00:00.0 | True | 31 | 3 | bcb32276-92ad-f011-8312-3c219cc9efd1 | 17 | 2 | 34 31 40 FS, 103 31 106 FS, 104 31 107 FS |  |  | 2025-12-23T08:00:00.0 |  |  | 57600 |  |  |  |
| 2025-12-23T08:00:00.0 | ed | Board DFM Report(QO4-091),PCBA Production Report(QO4-135)(SMT ME) | 1.3.3.1 | START_NO_EARLIER_THAN |  | 500 | 144000 | 144000 | 2025-12-23T08:00:00.0 | 2025-12-30T17:00:00.0 | 2026-01-12T08:00:00.0 | 2026-01-19T08:00:00.0 | 32 |  | 2025-10-20T08:00:00.0 |  | 1.3.3.1 | PRORATED | True | True | Task | True | 40b32276-92ad-f011-8312-3c219cc9efd1 | True | PRORATED | 144000 | 2025-12-30T17:00:00.0 | 2025-12-23T08:00:00.0 | True | 2025-12-30T17:00:00.0 | True | 32 | 4 | bcb32276-92ad-f011-8312-3c219cc9efd1 | 31 | 2 |  | 345600 |  | 2025-12-23T08:00:00.0 | 345600 | 25 30 32 FS | 345600 | 2025-12-23T08:00:00.0 | 345600 |  |
| 2025-12-23T08:00:00.0 | ed | ARM FW E-Test Report(QD4-113)/MCU FW E-Test Report(QD4-114)(ARM SW) | 1.3.3.2 | START_NO_EARLIER_THAN |  | 500 | 144000 | 144000 | 2025-12-23T08:00:00.0 | 2025-12-30T17:00:00.0 | 2026-01-12T08:00:00.0 | 2026-01-19T08:00:00.0 | 33 |  | 2025-10-20T08:00:00.0 |  | 1.3.3.2 | PRORATED | True | True | Task | True | 41b32276-92ad-f011-8312-3c219cc9efd1 | True | PRORATED | 144000 | 2025-12-30T17:00:00.0 | 2025-12-23T08:00:00.0 | True | 2025-12-30T17:00:00.0 | True | 33 | 4 | bcb32276-92ad-f011-8312-3c219cc9efd1 | 31 | 2 |  | 345600 |  | 2025-12-23T08:00:00.0 | 345600 | 26 30 33 FS | 345600 | 2025-12-23T08:00:00.0 | 345600 |  |
| 2025-12-23T08:00:00.0 | ed | BIOS_EC SW E-Test Report(QD4-039)(EC) | 1.3.3.3 | START_NO_EARLIER_THAN |  | 500 | 144000 | 144000 | 2025-12-23T08:00:00.0 | 2025-12-30T17:00:00.0 | 2026-01-12T08:00:00.0 | 2026-01-19T08:00:00.0 | 34 |  | 2025-10-20T08:00:00.0 |  | 1.3.3.3 | PRORATED | True | True | Task | True | 42b32276-92ad-f011-8312-3c219cc9efd1 | True | PRORATED | 144000 | 2025-12-30T17:00:00.0 | 2025-12-23T08:00:00.0 | True | 2025-12-30T17:00:00.0 | True | 34 | 4 | bcb32276-92ad-f011-8312-3c219cc9efd1 | 31 | 2 |  | 345600 |  | 2025-12-23T08:00:00.0 | 345600 | 27 30 34 FS | 345600 | 2025-12-23T08:00:00.0 | 345600 |  |
| 2025-12-23T08:00:00.0 | ed | BIOS_EC SW E-Test Report(QD4-039)(BIOS) | 1.3.3.4 | START_NO_EARLIER_THAN |  | 500 | 432000 | 432000 | 2025-12-23T08:00:00.0 | 2026-01-14T17:00:00.0 | 2025-12-26T08:00:00.0 | 2026-01-19T08:00:00.0 | 35 |  | 2025-10-20T08:00:00.0 |  | 1.3.3.4 | PRORATED | True | True | Task | True | 43b32276-92ad-f011-8312-3c219cc9efd1 | True | PRORATED | 432000 | 2026-01-14T17:00:00.0 | 2025-12-23T08:00:00.0 | True | 2026-01-14T17:00:00.0 | True | 35 | 4 | bcb32276-92ad-f011-8312-3c219cc9efd1 | 31 | 2 | 113 35 122 FS, 114 35 123 FS | 57600 |  | 2025-12-23T08:00:00.0 | 57600 | 28 30 35 FS | 57600 | 2025-12-23T08:00:00.0 |  |  |
| 2025-12-23T08:00:00.0 | ed | HW E-Test Report(QD4-009)/RISC HW E-Report(QD4-041)(HW) | 1.3.3.5 | START_NO_EARLIER_THAN |  | 500 | 432000 | 432000 | 2025-12-23T08:00:00.0 | 2026-01-14T17:00:00.0 | 2025-12-26T08:00:00.0 | 2026-01-19T08:00:00.0 | 36 |  | 2025-10-20T08:00:00.0 |  | 1.3.3.5 | PRORATED | True | True | Task | True | 44b32276-92ad-f011-8312-3c219cc9efd1 | True | PRORATED | 432000 | 2026-01-14T17:00:00.0 | 2025-12-23T08:00:00.0 | True | 2026-01-14T17:00:00.0 | True | 36 | 4 | bcb32276-92ad-f011-8312-3c219cc9efd1 | 31 | 2 |  | 57600 |  | 2025-12-23T08:00:00.0 | 57600 | 29 30 36 FS | 57600 | 2025-12-23T08:00:00.0 | 57600 |  |
| 2026-01-02T08:00:00.0 | ed | P2 EMC Test Report(QD4-070),ESD Test Records Form(QD4-068)(EMC) | 1.3.3.6 | START_NO_EARLIER_THAN |  | 500 | 288000 | 288000 | 2026-01-02T08:00:00.0 | 2026-01-15T17:00:00.0 | 2026-01-05T08:00:00.0 | 2026-01-19T08:00:00.0 | 37 |  | 2025-10-20T08:00:00.0 |  | 1.3.3.6 | PRORATED | True | True | Task | True | 45b32276-92ad-f011-8312-3c219cc9efd1 | True | PRORATED | 288000 | 2026-01-15T17:00:00.0 | 2026-01-02T08:00:00.0 | True | 2026-01-15T17:00:00.0 | True | 37 | 4 | bcb32276-92ad-f011-8312-3c219cc9efd1 | 31 | 2 |  | 28800 |  | 2026-01-02T08:00:00.0 | 28800 | 30 30 37 172800 FS | 28800 | 2025-12-31T17:00:00.0 | 28800 |  |
| 2026-01-02T08:00:00.0 | ed | RDQ Problem Tracking(QD4-062),Board Product Design Verification Plan(QQ4-014/107)(DQV) | 1.3.3.7 | START_NO_EARLIER_THAN | True | 500 | 316800 | 316800 | 2026-01-02T08:00:00.0 | 2026-01-16T17:00:00.0 | 2026-01-02T08:00:00.0 | 2026-01-19T08:00:00.0 | 38 |  | 2025-10-20T08:00:00.0 |  | 1.3.3.7 | PRORATED | True | True | Task | True | 46b32276-92ad-f011-8312-3c219cc9efd1 | True | PRORATED | 316800 | 2026-01-16T17:00:00.0 | 2026-01-02T08:00:00.0 | True | 2026-01-16T17:00:00.0 | True | 38 | 4 | bcb32276-92ad-f011-8312-3c219cc9efd1 | 31 | 2 |  |  |  | 2026-01-02T08:00:00.0 |  | 31 30 38 172800 FS |  | 2025-12-31T17:00:00.0 |  |  |
| 2026-02-09T08:00:00.0 | ed | C2 Review Meeting | 1.3.4 | START_NO_EARLIER_THAN | True | 500 | 28800 | 28800 | 2026-02-09T08:00:00.0 | 2026-02-09T17:00:00.0 | 2026-02-09T08:00:00.0 | 2026-02-10T08:00:00.0 | 39 | True | 2025-10-20T08:00:00.0 |  | 1.3.4 | PRORATED | True | True | Phase | True | 47b32276-92ad-f011-8312-3c219cc9efd1 | True | PRORATED | 28800 | 2026-02-09T17:00:00.0 | 2026-02-09T08:00:00.0 | True | 2026-02-09T17:00:00.0 | True | 39 | 3 | bcb32276-92ad-f011-8312-3c219cc9efd1 | 17 | 2 | 35 39 41 FS |  |  | 2026-02-09T08:00:00.0 |  | 32 105 39 FS |  |  |  |  |
| 2026-02-09T08:00:00.0 | ed | C2 Close Review Meeting Minutes(QD4-067)(PM) | 1.3.4.1 | START_NO_EARLIER_THAN | True | 500 | 28800 | 28800 | 2026-02-09T08:00:00.0 | 2026-02-09T17:00:00.0 | 2026-02-09T08:00:00.0 | 2026-02-10T08:00:00.0 | 40 |  | 2025-10-20T08:00:00.0 |  | 1.3.4.1 | PRORATED | True | True | Task | True | 48b32276-92ad-f011-8312-3c219cc9efd1 | True | PRORATED | 28800 | 2026-02-09T17:00:00.0 | 2026-02-09T08:00:00.0 | True | 2026-02-09T17:00:00.0 | True | 40 | 4 | bcb32276-92ad-f011-8312-3c219cc9efd1 | 39 | 2 |  |  |  | 2026-02-09T08:00:00.0 |  | 33 115 40 FS, 34 31 40 FS |  | 2026-02-09T08:00:00.0 |  |  |
| 2026-02-09T17:00:00.0 | ed | C2 PDC Check(PDC) | 1.4 | START_NO_EARLIER_THAN | True | 500 |  |  | 2026-02-09T17:00:00.0 | 2026-02-09T17:00:00.0 | 2026-02-10T08:00:00.0 | 2026-02-10T08:00:00.0 | 41 |  | 2025-10-20T08:00:00.0 |  | 1.4 | PRORATED | True | True | Gate | True | 49b32276-92ad-f011-8312-3c219cc9efd1 | True | PRORATED |  | 2026-02-09T17:00:00.0 | 2026-02-09T17:00:00.0 | True | 2026-02-09T17:00:00.0 | True | 41 | 2 | bcb32276-92ad-f011-8312-3c219cc9efd1 | 1 | 2 | 36 41 44 FS |  |  | 2026-02-09T17:00:00.0 |  | 35 39 41 FS |  | 2026-02-09T17:00:00.0 |  | True |
| 2026-02-10T08:00:00.0 | ed | P3-DVT Phase | 1.5 | START_NO_EARLIER_THAN | True | 500 | 1699200 | 1699200 | 2026-02-10T08:00:00.0 | 2026-05-14T17:00:00.0 | 2026-02-10T08:00:00.0 | 2026-07-09T17:00:00.0 | 42 | True | 2025-10-20T08:00:00.0 |  | 1.5 | PRORATED | True | True | Phase | True | 4ab32276-92ad-f011-8312-3c219cc9efd1 | True | PRORATED | 1699200 | 2026-05-14T17:00:00.0 | 2026-02-10T08:00:00.0 | True | 2026-05-14T17:00:00.0 | True | 42 | 2 | bcb32276-92ad-f011-8312-3c219cc9efd1 | 1 | 2 |  | 1123200 |  | 2026-02-10T08:00:00.0 |  |  |  |  |  |  |
| 2026-02-10T08:00:00.0 | ed | Design Modification for DVT | 1.5.1 | START_NO_EARLIER_THAN | True | 500 | 259200 | 259200 | 2026-02-10T08:00:00.0 | 2026-03-02T17:00:00.0 | 2026-02-10T08:00:00.0 | 2026-07-09T17:00:00.0 | 43 | True | 2025-10-20T08:00:00.0 |  | 1.5.1 | PRORATED | True | True | Phase | True | 4bb32276-92ad-f011-8312-3c219cc9efd1 | True | PRORATED | 259200 | 2026-03-02T17:00:00.0 | 2026-02-10T08:00:00.0 | True | 2026-03-02T17:00:00.0 | True | 43 | 3 | bcb32276-92ad-f011-8312-3c219cc9efd1 | 42 | 2 |  | 2563200 |  | 2026-02-10T08:00:00.0 |  |  |  |  |  |  |
| 2026-02-10T08:00:00.0 | ed | Circuit Diagram Modification[電路圖修改](HW) | 1.5.1.1 | START_NO_EARLIER_THAN | True | 500 | 86400 | 86400 | 2026-02-10T08:00:00.0 | 2026-02-12T17:00:00.0 | 2026-02-10T08:00:00.0 | 2026-02-13T08:00:00.0 | 44 |  | 2025-10-20T08:00:00.0 |  | 1.5.1.1 | PRORATED | True | True | Task | True | 4cb32276-92ad-f011-8312-3c219cc9efd1 | True | PRORATED | 86400 | 2026-02-12T17:00:00.0 | 2026-02-10T08:00:00.0 | True | 2026-02-12T17:00:00.0 | True | 44 | 4 | bcb32276-92ad-f011-8312-3c219cc9efd1 | 43 | 2 | 37 44 45 FS, 38 44 46 FS, 115 44 125 FS, 116 44 127 FS, 117 44 128 FS, 118 44 129 FS, 119 44 130 FS, 120 44 131 FS |  |  | 2026-02-10T08:00:00.0 |  | 36 41 44 FS |  | 2026-02-10T08:00:00.0 |  |  |
| 2026-02-13T08:00:00.0 | ed | Schematics Review(HW) | 1.5.1.2 | START_NO_EARLIER_THAN |  | 500 | 144000 | 144000 | 2026-02-13T08:00:00.0 | 2026-02-26T17:00:00.0 | 2026-07-03T08:00:00.0 | 2026-07-09T17:00:00.0 | 45 |  | 2025-10-20T08:00:00.0 |  | 1.5.1.2 | PRORATED | True | True | Task | True | 4db32276-92ad-f011-8312-3c219cc9efd1 | True | PRORATED | 144000 | 2026-02-26T17:00:00.0 | 2026-02-13T08:00:00.0 | True | 2026-02-26T17:00:00.0 | True | 45 | 4 | bcb32276-92ad-f011-8312-3c219cc9efd1 | 43 | 2 |  | 2592000 |  | 2026-02-13T08:00:00.0 | 2592000 | 37 44 45 FS | 2592000 | 2026-02-12T17:00:00.0 | 2592000 |  |
| 2026-02-13T08:00:00.0 | ed | Layout Modify and Gerber out(HW) | 1.5.1.3 | START_NO_EARLIER_THAN | True | 500 | 144000 | 144000 | 2026-02-13T08:00:00.0 | 2026-02-26T17:00:00.0 | 2026-02-13T08:00:00.0 | 2026-03-02T08:00:00.0 | 46 |  | 2025-10-20T08:00:00.0 |  | 1.5.1.3 | PRORATED | True | True | Task | True | 4eb32276-92ad-f011-8312-3c219cc9efd1 | True | PRORATED | 144000 | 2026-02-26T17:00:00.0 | 2026-02-13T08:00:00.0 | True | 2026-02-26T17:00:00.0 | True | 46 | 4 | bcb32276-92ad-f011-8312-3c219cc9efd1 | 43 | 2 | 39 46 47 FS, 40 46 49 FS |  |  | 2026-02-13T08:00:00.0 |  | 38 44 46 FS |  | 2026-02-12T17:00:00.0 |  |  |
| 2026-03-02T08:00:00.0 | ed | DVT BOM Release(HW) | 1.5.1.4 | START_NO_EARLIER_THAN |  | 500 | 28800 | 28800 | 2026-03-02T08:00:00.0 | 2026-03-02T17:00:00.0 | 2026-07-09T08:00:00.0 | 2026-07-09T17:00:00.0 | 47 |  | 2025-10-20T08:00:00.0 |  | 1.5.1.4 | PRORATED | True | True | Task | True | 4fb32276-92ad-f011-8312-3c219cc9efd1 | True | PRORATED | 28800 | 2026-03-02T17:00:00.0 | 2026-03-02T08:00:00.0 | True | 2026-03-02T17:00:00.0 | True | 47 | 4 | bcb32276-92ad-f011-8312-3c219cc9efd1 | 43 | 2 |  | 2563200 |  | 2026-03-02T08:00:00.0 | 2563200 | 39 46 47 FS | 2563200 | 2026-02-26T17:00:00.0 | 2563200 |  |
| 2026-03-02T08:00:00.0 | ed | DVT Sample | 1.5.2 | START_NO_EARLIER_THAN | True | 500 | 633600 | 633600 | 2026-03-02T08:00:00.0 | 2026-03-31T17:00:00.0 | 2026-03-02T08:00:00.0 | 2026-04-01T08:00:00.0 | 48 | True | 2025-10-20T08:00:00.0 |  | 1.5.2 | PRORATED | True | True | Phase | True | 50b32276-92ad-f011-8312-3c219cc9efd1 | True | PRORATED | 633600 | 2026-03-31T17:00:00.0 | 2026-03-02T08:00:00.0 | True | 2026-03-31T17:00:00.0 | True | 48 | 3 | bcb32276-92ad-f011-8312-3c219cc9efd1 | 42 | 2 |  |  |  | 2026-03-02T08:00:00.0 |  |  |  |  |  |  |
| 2026-03-02T08:00:00.0 | ed | DVT Sample Request(HW) | 1.5.2.1 | START_NO_EARLIER_THAN | True | 500 | 28800 | 28800 | 2026-03-02T08:00:00.0 | 2026-03-02T17:00:00.0 | 2026-03-02T08:00:00.0 | 2026-03-03T08:00:00.0 | 49 |  | 2025-10-20T08:00:00.0 |  | 1.5.2.1 | PRORATED | True | True | Task | True | 51b32276-92ad-f011-8312-3c219cc9efd1 | True | PRORATED | 28800 | 2026-03-02T17:00:00.0 | 2026-03-02T08:00:00.0 | True | 2026-03-02T17:00:00.0 | True | 49 | 4 | bcb32276-92ad-f011-8312-3c219cc9efd1 | 48 | 2 | 41 49 50 FS |  |  | 2026-03-02T08:00:00.0 |  | 40 46 49 FS |  | 2026-03-02T08:00:00.0 |  |  |
| 2026-03-03T08:00:00.0 | ed | DVT Material Preparation and DVT Sample Completed(PC) | 1.5.2.2 | START_NO_EARLIER_THAN | True | 500 | 432000 | 432000 | 2026-03-03T08:00:00.0 | 2026-03-23T17:00:00.0 | 2026-03-03T08:00:00.0 | 2026-03-24T08:00:00.0 | 50 |  | 2025-10-20T08:00:00.0 |  | 1.5.2.2 | PRORATED | True | True | Task | True | 52b32276-92ad-f011-8312-3c219cc9efd1 | True | PRORATED | 432000 | 2026-03-23T17:00:00.0 | 2026-03-03T08:00:00.0 | True | 2026-03-23T17:00:00.0 | True | 50 | 4 | bcb32276-92ad-f011-8312-3c219cc9efd1 | 48 | 2 | 42 50 51 FS |  |  | 2026-03-03T08:00:00.0 |  | 41 49 50 FS |  | 2026-03-02T17:00:00.0 |  |  |
| 2026-03-24T08:00:00.0 | ed | DVT HW E-Test Report(QD4-009)/RISC HW E-Report(QD4-041)(HW) | 1.5.2.3 | START_NO_EARLIER_THAN | True | 500 | 144000 | 144000 | 2026-03-24T08:00:00.0 | 2026-03-30T17:00:00.0 | 2026-03-24T08:00:00.0 | 2026-03-31T08:00:00.0 | 51 |  | 2025-10-20T08:00:00.0 |  | 1.5.2.3 | PRORATED | True | True | Task | True | 53b32276-92ad-f011-8312-3c219cc9efd1 | True | PRORATED | 144000 | 2026-03-30T17:00:00.0 | 2026-03-24T08:00:00.0 | True | 2026-03-30T17:00:00.0 | True | 51 | 4 | bcb32276-92ad-f011-8312-3c219cc9efd1 | 48 | 2 | 43 51 52 FS |  |  | 2026-03-24T08:00:00.0 |  | 42 50 51 FS |  | 2026-03-23T17:00:00.0 |  |  |
| 2026-03-31T08:00:00.0 | ed | Working Sample to DQV,AE,PE,EMC(PM) | 1.5.2.4 | START_NO_EARLIER_THAN | True | 500 | 28800 | 28800 | 2026-03-31T08:00:00.0 | 2026-03-31T17:00:00.0 | 2026-03-31T08:00:00.0 | 2026-04-01T08:00:00.0 | 52 |  | 2025-10-20T08:00:00.0 |  | 1.5.2.4 | PRORATED | True | True | Task | True | 54b32276-92ad-f011-8312-3c219cc9efd1 | True | PRORATED | 28800 | 2026-03-31T17:00:00.0 | 2026-03-31T08:00:00.0 | True | 2026-03-31T17:00:00.0 | True | 52 | 4 | bcb32276-92ad-f011-8312-3c219cc9efd1 | 48 | 2 | 44 52 54 FS, 45 52 55 FS, 46 52 56 FS |  |  | 2026-03-31T08:00:00.0 |  | 43 51 52 FS |  | 2026-03-30T17:00:00.0 |  |  |
| 2026-04-01T08:00:00.0 | ed | DVT Tests | 1.5.3 | START_NO_EARLIER_THAN | True | 500 | 374400 | 374400 | 2026-04-01T08:00:00.0 | 2026-04-21T17:00:00.0 | 2026-04-01T08:00:00.0 | 2026-04-22T08:00:00.0 | 53 | True | 2025-10-20T08:00:00.0 |  | 1.5.3 | PRORATED | True | True | Phase | True | 55b32276-92ad-f011-8312-3c219cc9efd1 | True | PRORATED | 374400 | 2026-04-21T17:00:00.0 | 2026-04-01T08:00:00.0 | True | 2026-04-21T17:00:00.0 | True | 53 | 3 | bcb32276-92ad-f011-8312-3c219cc9efd1 | 42 | 2 | 49 53 59 FS, 50 53 60 FS, 51 53 61 FS, 52 53 62 FS, 56 53 64 FS, 105 53 109 FS, 121 53 132 FS |  |  | 2026-04-01T08:00:00.0 |  |  |  |  |  |  |
| 2026-04-01T08:00:00.0 | ed | VBIOS LCD Test Report(QD4-038)(Internal AE) | 1.5.3.1 | START_NO_EARLIER_THAN |  | 500 | 172800 | 172800 | 2026-04-01T08:00:00.0 | 2026-04-10T17:00:00.0 | 2026-04-14T08:00:00.0 | 2026-04-22T08:00:00.0 | 54 |  | 2025-10-20T08:00:00.0 |  | 1.5.3.1 | PRORATED | True | True | Task | True | 56b32276-92ad-f011-8312-3c219cc9efd1 | True | PRORATED | 172800 | 2026-04-10T17:00:00.0 | 2026-04-01T08:00:00.0 | True | 2026-04-10T17:00:00.0 | True | 54 | 4 | bcb32276-92ad-f011-8312-3c219cc9efd1 | 53 | 2 |  | 201600 |  | 2026-04-01T08:00:00.0 | 201600 | 44 52 54 FS | 201600 | 2026-04-01T08:00:00.0 | 201600 |  |
| 2026-04-01T08:00:00.0 | ed | P3 EMC Test Report(QD4-070),ESD Test Records Form(QD4-068)(EMC) | 1.5.3.2 | START_NO_EARLIER_THAN |  | 500 | 288000 | 288000 | 2026-04-01T08:00:00.0 | 2026-04-16T17:00:00.0 | 2026-04-02T08:00:00.0 | 2026-04-20T08:00:00.0 | 55 |  | 2025-10-20T08:00:00.0 |  | 1.5.3.2 | PRORATED | True | True | Task | True | 57b32276-92ad-f011-8312-3c219cc9efd1 | True | PRORATED | 288000 | 2026-04-16T17:00:00.0 | 2026-04-01T08:00:00.0 | True | 2026-04-16T17:00:00.0 | True | 55 | 4 | bcb32276-92ad-f011-8312-3c219cc9efd1 | 53 | 2 | 47 55 57 FS | 28800 |  | 2026-04-01T08:00:00.0 | 28800 | 45 52 55 FS | 28800 | 2026-04-01T08:00:00.0 | 28800 |  |
| 2026-04-01T08:00:00.0 | ed | Board Product Design Verification Report(QQ4-014/107)(DQV) | 1.5.3.3 | START_NO_EARLIER_THAN | True | 500 | 316800 | 316800 | 2026-04-01T08:00:00.0 | 2026-04-17T17:00:00.0 | 2026-04-01T08:00:00.0 | 2026-04-20T08:00:00.0 | 56 |  | 2025-10-20T08:00:00.0 |  | 1.5.3.3 | PRORATED | True | True | Task | True | 58b32276-92ad-f011-8312-3c219cc9efd1 | True | PRORATED | 316800 | 2026-04-17T17:00:00.0 | 2026-04-01T08:00:00.0 | True | 2026-04-17T17:00:00.0 | True | 56 | 4 | bcb32276-92ad-f011-8312-3c219cc9efd1 | 53 | 2 | 48 56 57 FS, 122 56 133 FS |  |  | 2026-04-01T08:00:00.0 |  | 46 52 56 FS |  | 2026-04-01T08:00:00.0 |  |  |
| 2026-04-20T08:00:00.0 | ed | Bug Discussion Meeting(QD4-021)(PM) | 1.5.3.4 | START_NO_EARLIER_THAN | True | 500 | 57600 | 57600 | 2026-04-20T08:00:00.0 | 2026-04-21T17:00:00.0 | 2026-04-20T08:00:00.0 | 2026-04-22T08:00:00.0 | 57 |  | 2025-10-20T08:00:00.0 |  | 1.5.3.4 | PRORATED | True | True | Task | True | 59b32276-92ad-f011-8312-3c219cc9efd1 | True | PRORATED | 57600 | 2026-04-21T17:00:00.0 | 2026-04-20T08:00:00.0 | True | 2026-04-21T17:00:00.0 | True | 57 | 4 | bcb32276-92ad-f011-8312-3c219cc9efd1 | 53 | 2 |  |  |  | 2026-04-20T08:00:00.0 |  | 47 55 57 FS, 48 56 57 FS |  | 2026-04-17T17:00:00.0 |  |  |
| 2026-04-22T08:00:00.0 | ed | DVT Review and PVT Preparation | 1.5.4 | START_NO_EARLIER_THAN |  | 500 | 57600 | 57600 | 2026-04-22T08:00:00.0 | 2026-04-23T17:00:00.0 | 2026-05-12T08:00:00.0 | 2026-05-14T08:00:00.0 | 58 | True | 2025-10-20T08:00:00.0 |  | 1.5.4 | PRORATED | True | True | Phase | True | 5ab32276-92ad-f011-8312-3c219cc9efd1 | True | PRORATED | 57600 | 2026-04-23T17:00:00.0 | 2026-04-22T08:00:00.0 | True | 2026-04-23T17:00:00.0 | True | 58 | 3 | bcb32276-92ad-f011-8312-3c219cc9efd1 | 42 | 2 | 55 58 64 FS | 374400 |  | 2026-04-22T08:00:00.0 | 374400 |  | 374400 |  | 374400 |  |
| 2026-04-22T08:00:00.0 | ed | Board Project Specification(Final)(QD4-073/092)(PM) | 1.5.4.1 | START_NO_EARLIER_THAN |  | 500 | 57600 | 57600 | 2026-04-22T08:00:00.0 | 2026-04-23T17:00:00.0 | 2026-05-12T08:00:00.0 | 2026-05-14T08:00:00.0 | 59 |  | 2025-10-20T08:00:00.0 |  | 1.5.4.1 | PRORATED | True | True | Task | True | 5bb32276-92ad-f011-8312-3c219cc9efd1 | True | PRORATED | 57600 | 2026-04-23T17:00:00.0 | 2026-04-22T08:00:00.0 | True | 2026-04-23T17:00:00.0 | True | 59 | 4 | bcb32276-92ad-f011-8312-3c219cc9efd1 | 58 | 2 |  | 374400 |  | 2026-04-22T08:00:00.0 | 374400 | 49 53 59 FS | 374400 | 2026-04-22T08:00:00.0 | 374400 |  |
| 2026-04-22T08:00:00.0 | ed | Board Technology Transfer Check List(QO4-125)(Board PE) | 1.5.4.2 | START_NO_EARLIER_THAN |  | 500 | 57600 | 57600 | 2026-04-22T08:00:00.0 | 2026-04-23T17:00:00.0 | 2026-05-12T08:00:00.0 | 2026-05-14T08:00:00.0 | 60 |  | 2025-10-20T08:00:00.0 |  | 1.5.4.2 | PRORATED | True | True | Task | True | 5cb32276-92ad-f011-8312-3c219cc9efd1 | True | PRORATED | 57600 | 2026-04-23T17:00:00.0 | 2026-04-22T08:00:00.0 | True | 2026-04-23T17:00:00.0 | True | 60 | 4 | bcb32276-92ad-f011-8312-3c219cc9efd1 | 58 | 2 |  | 374400 |  | 2026-04-22T08:00:00.0 | 374400 | 50 53 60 FS | 374400 | 2026-04-22T08:00:00.0 | 374400 |  |
| 2026-04-22T08:00:00.0 | ed | Production Trial Run Report(QO4-142)(Board PE) | 1.5.4.3 | START_NO_EARLIER_THAN |  | 500 | 57600 | 57600 | 2026-04-22T08:00:00.0 | 2026-04-23T17:00:00.0 | 2026-05-12T08:00:00.0 | 2026-05-14T08:00:00.0 | 61 |  | 2025-10-20T08:00:00.0 |  | 1.5.4.3 | PRORATED | True | True | Task | True | 5db32276-92ad-f011-8312-3c219cc9efd1 | True | PRORATED | 57600 | 2026-04-23T17:00:00.0 | 2026-04-22T08:00:00.0 | True | 2026-04-23T17:00:00.0 | True | 61 | 4 | bcb32276-92ad-f011-8312-3c219cc9efd1 | 58 | 2 |  | 374400 |  | 2026-04-22T08:00:00.0 | 374400 | 51 53 61 FS | 374400 | 2026-04-22T08:00:00.0 | 374400 |  |
| 2026-04-22T08:00:00.0 | ed | Board Mechanical Drawing(Final)(ME) | 1.5.4.4 | START_NO_EARLIER_THAN |  | 500 | 57600 | 57600 | 2026-04-22T08:00:00.0 | 2026-04-23T17:00:00.0 | 2026-05-12T08:00:00.0 | 2026-05-14T08:00:00.0 | 62 |  | 2025-10-20T08:00:00.0 |  | 1.5.4.4 | PRORATED | True | True | Task | True | 5eb32276-92ad-f011-8312-3c219cc9efd1 | True | PRORATED | 57600 | 2026-04-23T17:00:00.0 | 2026-04-22T08:00:00.0 | True | 2026-04-23T17:00:00.0 | True | 62 | 4 | bcb32276-92ad-f011-8312-3c219cc9efd1 | 58 | 2 |  | 374400 |  | 2026-04-22T08:00:00.0 | 374400 | 52 53 62 FS | 374400 | 2026-04-22T08:00:00.0 | 374400 |  |
| 2026-05-14T08:00:00.0 | ed | C3 Review Meeting | 1.5.5 | START_NO_EARLIER_THAN | True | 500 | 28800 | 28800 | 2026-05-14T08:00:00.0 | 2026-05-14T17:00:00.0 | 2026-05-14T08:00:00.0 | 2026-05-15T08:00:00.0 | 63 | True | 2025-10-20T08:00:00.0 |  | 1.5.5 | PRORATED | True | True | Phase | True | 5fb32276-92ad-f011-8312-3c219cc9efd1 | True | PRORATED | 28800 | 2026-05-14T17:00:00.0 | 2026-05-14T08:00:00.0 | True | 2026-05-14T17:00:00.0 | True | 63 | 3 | bcb32276-92ad-f011-8312-3c219cc9efd1 | 42 | 2 | 57 63 65 FS |  |  | 2026-05-14T08:00:00.0 |  |  |  |  |  |  |
| 2026-05-14T08:00:00.0 | ed | C3 Close Review Meeting Minutes(QD4-067)(PM) | 1.5.5.1 | START_NO_EARLIER_THAN | True | 500 | 28800 | 28800 | 2026-05-14T08:00:00.0 | 2026-05-14T17:00:00.0 | 2026-05-14T08:00:00.0 | 2026-05-15T08:00:00.0 | 64 |  | 2025-10-20T08:00:00.0 |  | 1.5.5.1 | PRORATED | True | True | Task | True | 60b32276-92ad-f011-8312-3c219cc9efd1 | True | PRORATED | 28800 | 2026-05-14T17:00:00.0 | 2026-05-14T08:00:00.0 | True | 2026-05-14T17:00:00.0 | True | 64 | 4 | bcb32276-92ad-f011-8312-3c219cc9efd1 | 63 | 2 |  |  |  | 2026-05-14T08:00:00.0 |  | 53 124 64 FS, 54 108 64 FS, 55 58 64 FS, 56 53 64 FS |  | 2026-05-14T08:00:00.0 |  |  |
| 2026-05-14T17:00:00.0 | ed | C3 PDC Check(PDC) | 1.6 | START_NO_EARLIER_THAN | True | 500 |  |  | 2026-05-14T17:00:00.0 | 2026-05-14T17:00:00.0 | 2026-05-15T08:00:00.0 | 2026-05-15T08:00:00.0 | 65 |  | 2025-10-20T08:00:00.0 |  | 1.6 | PRORATED | True | True | Gate | True | 61b32276-92ad-f011-8312-3c219cc9efd1 | True | PRORATED |  | 2026-05-14T17:00:00.0 | 2026-05-14T17:00:00.0 | True | 2026-05-14T17:00:00.0 | True | 65 | 2 | bcb32276-92ad-f011-8312-3c219cc9efd1 | 1 | 2 | 58 65 68 FS, 59 65 69 FS, 60 65 70 FS, 61 65 71 FS, 64 65 74 FS, 65 65 75 FS, 68 65 76 FS |  |  | 2026-05-14T17:00:00.0 |  | 57 63 65 FS |  | 2026-05-14T17:00:00.0 |  | True |
| 2026-05-15T08:00:00.0 | ed | P4-PVT Phase | 1.7 | START_NO_EARLIER_THAN | True | 500 | 1123200 | 1123200 | 2026-05-15T08:00:00.0 | 2026-07-09T17:00:00.0 | 2026-05-15T08:00:00.0 | 2026-07-09T17:00:00.0 | 66 | True | 2025-10-20T08:00:00.0 |  | 1.7 | PRORATED | True | True | Phase | True | 62b32276-92ad-f011-8312-3c219cc9efd1 | True | PRORATED | 1123200 | 2026-07-09T17:00:00.0 | 2026-05-15T08:00:00.0 | True | 2026-07-09T17:00:00.0 | True | 66 | 2 | bcb32276-92ad-f011-8312-3c219cc9efd1 | 1 | 2 |  |  |  | 2026-05-15T08:00:00.0 |  |  |  |  |  |  |
| 2026-05-15T08:00:00.0 | ed | Design Finalized and Request for PVT | 1.7.1 | START_NO_EARLIER_THAN | True | 500 | 288000 | 288000 | 2026-05-15T08:00:00.0 | 2026-05-28T17:00:00.0 | 2026-05-15T08:00:00.0 | 2026-07-09T17:00:00.0 | 67 | True | 2025-10-20T08:00:00.0 |  | 1.7.1 | PRORATED | True | True | Phase | True | 63b32276-92ad-f011-8312-3c219cc9efd1 | True | PRORATED | 288000 | 2026-05-28T17:00:00.0 | 2026-05-15T08:00:00.0 | True | 2026-05-28T17:00:00.0 | True | 67 | 3 | bcb32276-92ad-f011-8312-3c219cc9efd1 | 66 | 2 |  | 835200 |  | 2026-05-15T08:00:00.0 |  |  |  |  |  |  |
| 2026-05-15T08:00:00.0 | ed | Final BIOS(BIOS) | 1.7.1.1 | START_NO_EARLIER_THAN |  | 500 | 28800 | 28800 | 2026-05-15T08:00:00.0 | 2026-05-15T17:00:00.0 | 2026-05-21T08:00:00.0 | 2026-05-22T08:00:00.0 | 68 |  | 2025-10-20T08:00:00.0 |  | 1.7.1.1 | PRORATED | True | True | Task | True | 64b32276-92ad-f011-8312-3c219cc9efd1 | True | PRORATED | 28800 | 2026-05-15T17:00:00.0 | 2026-05-15T08:00:00.0 | True | 2026-05-15T17:00:00.0 | True | 68 | 4 | bcb32276-92ad-f011-8312-3c219cc9efd1 | 67 | 2 | 69 68 76 FS, 71 68 77 FS | 115200 |  | 2026-05-15T08:00:00.0 | 115200 | 58 65 68 FS | 115200 | 2026-05-15T08:00:00.0 |  |  |
| 2026-05-15T08:00:00.0 | ed | Final Firmware(ARM SW) | 1.7.1.2 | START_NO_EARLIER_THAN |  | 500 | 28800 | 28800 | 2026-05-15T08:00:00.0 | 2026-05-15T17:00:00.0 | 2026-06-29T08:00:00.0 | 2026-06-30T08:00:00.0 | 69 |  | 2025-10-20T08:00:00.0 |  | 1.7.1.2 | PRORATED | True | True | Task | True | 65b32276-92ad-f011-8312-3c219cc9efd1 | True | PRORATED | 28800 | 2026-05-15T17:00:00.0 | 2026-05-15T08:00:00.0 | True | 2026-05-15T17:00:00.0 | True | 69 | 4 | bcb32276-92ad-f011-8312-3c219cc9efd1 | 67 | 2 | 67 69 76 FS | 864000 |  | 2026-05-15T08:00:00.0 | 864000 | 59 65 69 FS | 864000 | 2026-05-15T08:00:00.0 |  |  |

| start | leveling_delay_units | name | wbs | constraint_type | critical | priority | duration | remaining_duration | early_start | early_finish | late_start | late_finish | unique_id | summary | created | outline_number | fixed_cost_accrual | leveling_can_split | level_assignments | text29 | ignore_resource_calendar | guid | active | baseline_fixed_cost_accrual | scheduled_duration | scheduled_finish | scheduled_start | recalc_outline_codes | finish | auto_compute_actuals | id | outline_level | task_calendar_guid | parent_task_unique_id | calendar_unique_id | successors | finish_slack | constraint_date | total_slack | predecessors | start_slack | summary_progress | free_slack | milestone |
| --- | --- | --- | --- | --- | --- | --- | --- | --- | --- | --- | --- | --- | --- | --- | --- | --- | --- | --- | --- | --- | --- | --- | --- | --- | --- | --- | --- | --- | --- | --- | --- | --- | --- | --- | --- | --- | --- | --- | --- | --- | --- | --- | --- | --- |
| 2026-05-15T08:00:00.0 | ed | Final EC(EC) | 1.7.1.3 | START_NO_EARLIER_THAN |  | 500 | 28800 | 28800 | 2026-05-15T08:00:00.0 | 2026-05-15T17:00:00.0 | 2026-06-29T08:00:00.0 | 2026-06-30T08:00:00.0 | 70 |  | 2025-10-20T08:00:00.0 | 1.7.1.3 | PRORATED | True | True | Task | True | 66b32276-92ad-f011-8312-3c219cc9efd1 | True | PRORATED | 28800 | 2026-05-15T17:00:00.0 | 2026-05-15T08:00:00.0 | True | 2026-05-15T17:00:00.0 | True | 70 | 4 | bcb32276-92ad-f011-8312-3c219cc9efd1 | 67 | 2 | 66 70 76 FS | 864000 | 2026-05-15T08:00:00.0 | 864000 | 60 65 70 FS | 864000 | 2026-05-15T08:00:00.0 |  |  |
| 2026-05-15T08:00:00.0 | ed | Circuit Diagram[電路圖](Final)(HW) | 1.7.1.4 | START_NO_EARLIER_THAN | True | 500 | 86400 | 86400 | 2026-05-15T08:00:00.0 | 2026-05-19T17:00:00.0 | 2026-05-15T08:00:00.0 | 2026-05-20T08:00:00.0 | 71 |  | 2025-10-20T08:00:00.0 | 1.7.1.4 | PRORATED | True | True | Task | True | 67b32276-92ad-f011-8312-3c219cc9efd1 | True | PRORATED | 86400 | 2026-05-19T17:00:00.0 | 2026-05-15T08:00:00.0 | True | 2026-05-19T17:00:00.0 | True | 71 | 4 | bcb32276-92ad-f011-8312-3c219cc9efd1 | 67 | 2 | 62 71 72 FS, 63 71 73 FS |  | 2026-05-15T08:00:00.0 |  | 61 65 71 FS |  | 2026-05-15T08:00:00.0 |  |  |
| 2026-05-20T08:00:00.0 | ed | Schematics Review(HW) | 1.7.1.5 | START_NO_EARLIER_THAN |  | 500 | 57600 | 57600 | 2026-05-20T08:00:00.0 | 2026-05-21T17:00:00.0 | 2026-07-08T08:00:00.0 | 2026-07-09T17:00:00.0 | 72 |  | 2025-10-20T08:00:00.0 | 1.7.1.5 | PRORATED | True | True | Task | True | 68b32276-92ad-f011-8312-3c219cc9efd1 | True | PRORATED | 57600 | 2026-05-21T17:00:00.0 | 2026-05-20T08:00:00.0 | True | 2026-05-21T17:00:00.0 | True | 72 | 4 | bcb32276-92ad-f011-8312-3c219cc9efd1 | 67 | 2 |  | 979200 | 2026-05-20T08:00:00.0 | 979200 | 62 71 72 FS | 979200 | 2026-05-19T17:00:00.0 | 979200 |  |
| 2026-05-20T08:00:00.0 | ed | Layout Modify and Final Gerber(HW) | 1.7.1.6 | START_NO_EARLIER_THAN | True | 500 | 57600 | 57600 | 2026-05-20T08:00:00.0 | 2026-05-21T17:00:00.0 | 2026-05-20T08:00:00.0 | 2026-05-22T08:00:00.0 | 73 |  | 2025-10-20T08:00:00.0 | 1.7.1.6 | PRORATED | True | True | Task | True | 69b32276-92ad-f011-8312-3c219cc9efd1 | True | PRORATED | 57600 | 2026-05-21T17:00:00.0 | 2026-05-20T08:00:00.0 | True | 2026-05-21T17:00:00.0 | True | 73 | 4 | bcb32276-92ad-f011-8312-3c219cc9efd1 | 67 | 2 | 70 73 77 FS |  | 2026-05-20T08:00:00.0 |  | 63 71 73 FS |  | 2026-05-19T17:00:00.0 |  |  |
| 2026-05-15T08:00:00.0 | ed | Sales Kit(PM) | 1.7.1.7 | START_NO_EARLIER_THAN |  | 500 | 144000 | 144000 | 2026-05-15T08:00:00.0 | 2026-05-21T17:00:00.0 | 2026-07-03T08:00:00.0 | 2026-07-09T17:00:00.0 | 74 |  | 2025-10-20T08:00:00.0 | 1.7.1.7 | PRORATED | True | True | Task | True | 6ab32276-92ad-f011-8312-3c219cc9efd1 | True | PRORATED | 144000 | 2026-05-21T17:00:00.0 | 2026-05-15T08:00:00.0 | True | 2026-05-21T17:00:00.0 | True | 74 | 4 | bcb32276-92ad-f011-8312-3c219cc9efd1 | 67 | 2 |  | 979200 | 2026-05-15T08:00:00.0 | 979200 | 64 65 74 FS | 979200 | 2026-05-15T08:00:00.0 | 979200 |  |
| 2026-05-15T08:00:00.0 | ed | Datasheet(SM2) | 1.7.1.8 | START_NO_EARLIER_THAN |  | 500 | 144000 | 144000 | 2026-05-15T08:00:00.0 | 2026-05-21T17:00:00.0 | 2026-07-03T08:00:00.0 | 2026-07-09T17:00:00.0 | 75 |  | 2025-10-20T08:00:00.0 | 1.7.1.8 | PRORATED | True | True | Task | True | 6bb32276-92ad-f011-8312-3c219cc9efd1 | True | PRORATED | 144000 | 2026-05-21T17:00:00.0 | 2026-05-15T08:00:00.0 | True | 2026-05-21T17:00:00.0 | True | 75 | 4 | bcb32276-92ad-f011-8312-3c219cc9efd1 | 67 | 2 |  | 979200 | 2026-05-15T08:00:00.0 | 979200 | 65 65 75 FS | 979200 | 2026-05-15T08:00:00.0 | 979200 |  |
| 2026-05-18T08:00:00.0 | ed | Final Manual(SM) | 1.7.1.9 | START_NO_EARLIER_THAN |  | 500 | 230400 | 230400 | 2026-05-18T08:00:00.0 | 2026-05-27T17:00:00.0 | 2026-06-30T08:00:00.0 | 2026-07-09T17:00:00.0 | 76 |  | 2025-10-20T08:00:00.0 | 1.7.1.9 | PRORATED | True | True | Task | True | 6cb32276-92ad-f011-8312-3c219cc9efd1 | True | PRORATED | 230400 | 2026-05-27T17:00:00.0 | 2026-05-18T08:00:00.0 | True | 2026-05-27T17:00:00.0 | True | 76 | 4 | bcb32276-92ad-f011-8312-3c219cc9efd1 | 67 | 2 |  | 864000 | 2026-05-18T08:00:00.0 | 864000 | 66 70 76 FS, 67 69 76 FS, 68 65 76 FS, 69 68 76 FS | 864000 | 2026-05-15T17:00:00.0 | 864000 |  |
| 2026-05-22T08:00:00.0 | ed | PCBA Final BOM(HW) | 1.7.1.10 | START_NO_EARLIER_THAN | True | 500 | 28800 | 28800 | 2026-05-22T08:00:00.0 | 2026-05-22T17:00:00.0 | 2026-05-22T08:00:00.0 | 2026-05-25T08:00:00.0 | 77 |  | 2025-10-20T08:00:00.0 | 1.7.1.10 | PRORATED | True | True | Task | True | 6db32276-92ad-f011-8312-3c219cc9efd1 | True | PRORATED | 28800 | 2026-05-22T17:00:00.0 | 2026-05-22T08:00:00.0 | True | 2026-05-22T17:00:00.0 | True | 77 | 4 | bcb32276-92ad-f011-8312-3c219cc9efd1 | 67 | 2 | 72 77 78 FS, 74 77 80 FS |  | 2026-05-22T08:00:00.0 |  | 70 73 77 FS, 71 68 77 FS |  | 2026-05-21T17:00:00.0 |  |  |
| 2026-05-25T08:00:00.0 | ed | Product Final BOM(PM) | 1.7.1.11 | START_NO_EARLIER_THAN | True | 500 | 57600 | 57600 | 2026-05-25T08:00:00.0 | 2026-05-26T17:00:00.0 | 2026-05-25T08:00:00.0 | 2026-05-27T08:00:00.0 | 78 |  | 2025-10-20T08:00:00.0 | 1.7.1.11 | PRORATED | True | True | Task | True | 6eb32276-92ad-f011-8312-3c219cc9efd1 | True | PRORATED | 57600 | 2026-05-26T17:00:00.0 | 2026-05-25T08:00:00.0 | True | 2026-05-26T17:00:00.0 | True | 78 | 4 | bcb32276-92ad-f011-8312-3c219cc9efd1 | 67 | 2 | 73 78 79 FS, 75 78 80 FS, 76 78 81 FS, 77 78 82 FS |  | 2026-05-25T08:00:00.0 |  | 72 77 78 FS |  | 2026-05-22T17:00:00.0 |  |  |
| 2026-05-27T08:00:00.0 | ed | Packaging Sample to PE(PM) | 1.7.1.12 | START_NO_EARLIER_THAN |  | 500 | 28800 | 28800 | 2026-05-27T08:00:00.0 | 2026-05-27T17:00:00.0 | 2026-07-09T08:00:00.0 | 2026-07-09T17:00:00.0 | 79 |  | 2025-10-20T08:00:00.0 | 1.7.1.12 | PRORATED | True | True | Task | True | 6fb32276-92ad-f011-8312-3c219cc9efd1 | True | PRORATED | 28800 | 2026-05-27T17:00:00.0 | 2026-05-27T08:00:00.0 | True | 2026-05-27T17:00:00.0 | True | 79 | 4 | bcb32276-92ad-f011-8312-3c219cc9efd1 | 67 | 2 |  | 864000 | 2026-05-27T08:00:00.0 | 864000 | 73 78 79 FS | 864000 | 2026-05-26T17:00:00.0 | 864000 |  |
| 2026-05-27T08:00:00.0 | ed | Pilot Run Request(QO4-002)(PM) | 1.7.1.13 | START_NO_EARLIER_THAN | True | 500 | 57600 | 57600 | 2026-05-27T08:00:00.0 | 2026-05-28T17:00:00.0 | 2026-05-27T08:00:00.0 | 2026-05-29T08:00:00.0 | 80 |  | 2025-10-20T08:00:00.0 | 1.7.1.13 | PRORATED | True | True | Task | True | 70b32276-92ad-f011-8312-3c219cc9efd1 | True | PRORATED | 57600 | 2026-05-28T17:00:00.0 | 2026-05-27T08:00:00.0 | True | 2026-05-28T17:00:00.0 | True | 80 | 4 | bcb32276-92ad-f011-8312-3c219cc9efd1 | 67 | 2 | 78 80 84 FS |  | 2026-05-27T08:00:00.0 |  | 74 77 80 FS, 75 78 80 FS |  | 2026-05-26T17:00:00.0 |  |  |
| 2026-05-27T08:00:00.0 | ed | Product BOM Evaluation Table(PUR) | 1.7.1.14 | START_NO_EARLIER_THAN |  | 500 | 57600 | 57600 | 2026-05-27T08:00:00.0 | 2026-05-28T17:00:00.0 | 2026-07-08T08:00:00.0 | 2026-07-09T17:00:00.0 | 81 |  | 2025-10-20T08:00:00.0 | 1.7.1.14 | PRORATED | True | True | Task | True | 71b32276-92ad-f011-8312-3c219cc9efd1 | True | PRORATED | 57600 | 2026-05-28T17:00:00.0 | 2026-05-27T08:00:00.0 | True | 2026-05-28T17:00:00.0 | True | 81 | 4 | bcb32276-92ad-f011-8312-3c219cc9efd1 | 67 | 2 |  | 835200 | 2026-05-27T08:00:00.0 | 835200 | 76 78 81 FS | 835200 | 2026-05-26T17:00:00.0 | 835200 |  |
| 2026-05-27T08:00:00.0 | ed | MTBF Report(QD4-069)(DQV) | 1.7.1.15 | START_NO_EARLIER_THAN | True | 500 | 57600 | 57600 | 2026-05-27T08:00:00.0 | 2026-05-28T17:00:00.0 | 2026-05-27T08:00:00.0 | 2026-05-29T08:00:00.0 | 82 |  | 2025-10-20T08:00:00.0 | 1.7.1.15 | PRORATED | True | True | Task | True | 72b32276-92ad-f011-8312-3c219cc9efd1 | True | PRORATED | 57600 | 2026-05-28T17:00:00.0 | 2026-05-27T08:00:00.0 | True | 2026-05-28T17:00:00.0 | True | 82 | 4 | bcb32276-92ad-f011-8312-3c219cc9efd1 | 67 | 2 | 79 82 84 FS |  | 2026-05-27T08:00:00.0 |  | 77 78 82 FS |  | 2026-05-26T17:00:00.0 |  |  |
| 2026-05-29T08:00:00.0 | ed | PVT Sample and Part Approval | 1.7.2 | START_NO_EARLIER_THAN | True | 500 | 518400 | 518400 | 2026-05-29T08:00:00.0 | 2026-06-24T17:00:00.0 | 2026-05-29T08:00:00.0 | 2026-07-08T08:00:00.0 | 83 | True | 2025-10-20T08:00:00.0 | 1.7.2 | PRORATED | True | True | Phase | True | 73b32276-92ad-f011-8312-3c219cc9efd1 | True | PRORATED | 518400 | 2026-06-24T17:00:00.0 | 2026-05-29T08:00:00.0 | True | 2026-06-24T17:00:00.0 | True | 83 | 3 | bcb32276-92ad-f011-8312-3c219cc9efd1 | 66 | 2 | 95 83 99 FS, 100 83 100 FS | 259200 | 2026-05-29T08:00:00.0 |  |  |  |  |  |  |
| 2026-05-29T08:00:00.0 | ed | PVT Material Preparation Completed(Including PCB) and PCBA Warehoused(PC) | 1.7.2.1 | START_NO_EARLIER_THAN | True | 500 | 432000 | 432000 | 2026-05-29T08:00:00.0 | 2026-06-18T17:00:00.0 | 2026-05-29T08:00:00.0 | 2026-06-22T08:00:00.0 | 84 |  | 2025-10-20T08:00:00.0 | 1.7.2.1 | PRORATED | True | True | Task | True | 74b32276-92ad-f011-8312-3c219cc9efd1 | True | PRORATED | 432000 | 2026-06-18T17:00:00.0 | 2026-05-29T08:00:00.0 | True | 2026-06-18T17:00:00.0 | True | 84 | 4 | bcb32276-92ad-f011-8312-3c219cc9efd1 | 83 | 2 | 80 84 85 FS, 81 84 86 FS, 82 84 88 FS, 83 84 89 FS, 90 84 97 FS, 106 84 111 FS |  | 2026-05-29T08:00:00.0 |  | 78 80 84 FS, 79 82 84 FS |  | 2026-05-29T08:00:00.0 |  |  |
| 2026-06-22T08:00:00.0 | ed | PCBA BOM Parts Approval List(HW) | 1.7.2.2 | START_NO_EARLIER_THAN |  | 500 | 86400 | 86400 | 2026-06-22T08:00:00.0 | 2026-06-24T17:00:00.0 | 2026-07-03T08:00:00.0 | 2026-07-08T08:00:00.0 | 85 |  | 2025-10-20T08:00:00.0 | 1.7.2.2 | PRORATED | True | True | Task | True | 75b32276-92ad-f011-8312-3c219cc9efd1 | True | PRORATED | 86400 | 2026-06-24T17:00:00.0 | 2026-06-22T08:00:00.0 | True | 2026-06-24T17:00:00.0 | True | 85 | 4 | bcb32276-92ad-f011-8312-3c219cc9efd1 | 83 | 2 |  | 259200 | 2026-06-22T08:00:00.0 | 259200 | 80 84 85 FS | 259200 | 2026-06-18T17:00:00.0 | 259200 |  |
| 2026-06-22T08:00:00.0 | ed | Product BOM Parts Approval List(PM) | 1.7.2.3 | START_NO_EARLIER_THAN |  | 500 | 86400 | 86400 | 2026-06-22T08:00:00.0 | 2026-06-24T17:00:00.0 | 2026-07-03T08:00:00.0 | 2026-07-08T08:00:00.0 | 86 |  | 2025-10-20T08:00:00.0 | 1.7.2.3 | PRORATED | True | True | Task | True | 76b32276-92ad-f011-8312-3c219cc9efd1 | True | PRORATED | 86400 | 2026-06-24T17:00:00.0 | 2026-06-22T08:00:00.0 | True | 2026-06-24T17:00:00.0 | True | 86 | 4 | bcb32276-92ad-f011-8312-3c219cc9efd1 | 83 | 2 |  | 259200 | 2026-06-22T08:00:00.0 | 259200 | 81 84 86 FS | 259200 | 2026-06-18T17:00:00.0 | 259200 |  |
| 2026-06-22T08:00:00.0 | ed | SOP | 1.7.3 | START_NO_EARLIER_THAN | True | 500 | 144000 | 144000 | 2026-06-22T08:00:00.0 | 2026-06-26T17:00:00.0 | 2026-06-22T08:00:00.0 | 2026-06-29T08:00:00.0 | 87 | True | 2025-10-20T08:00:00.0 | 1.7.3 | PRORATED | True | True | Phase | True | 77b32276-92ad-f011-8312-3c219cc9efd1 | True | PRORATED | 144000 | 2026-06-26T17:00:00.0 | 2026-06-22T08:00:00.0 | True | 2026-06-26T17:00:00.0 | True | 87 | 3 | bcb32276-92ad-f011-8312-3c219cc9efd1 | 66 | 2 | 84 87 91 FS, 85 87 92 FS, 86 87 93 FS, 87 87 94 FS, 88 87 95 FS, 89 87 96 FS, 94 87 99 FS, 99 87 100 FS, 125 87 137 FS, 126 87 138 FS, 127 87 139 FS, 130 87 142 FS, 131 87 143 FS, 132 87 144 FS |  | 2026-06-22T08:00:00.0 |  |  |  |  |  |  |
| 2026-06-22T08:00:00.0 | ed | Production SOP[生產作業指導書](Board PE) | 1.7.3.1 | START_NO_EARLIER_THAN | True | 500 | 144000 | 144000 | 2026-06-22T08:00:00.0 | 2026-06-26T17:00:00.0 | 2026-06-22T08:00:00.0 | 2026-06-29T08:00:00.0 | 88 |  | 2025-10-20T08:00:00.0 | 1.7.3.1 | PRORATED | True | True | Task | True | 78b32276-92ad-f011-8312-3c219cc9efd1 | True | PRORATED | 144000 | 2026-06-26T17:00:00.0 | 2026-06-22T08:00:00.0 | True | 2026-06-26T17:00:00.0 | True | 88 | 4 | bcb32276-92ad-f011-8312-3c219cc9efd1 | 87 | 2 |  |  | 2026-06-22T08:00:00.0 |  | 82 84 88 FS |  | 2026-06-22T08:00:00.0 |  |  |
| 2026-06-22T08:00:00.0 | ed | Packaging SOP[包裝作業指導書](Board PE) | 1.7.3.2 | START_NO_EARLIER_THAN | True | 500 | 144000 | 144000 | 2026-06-22T08:00:00.0 | 2026-06-26T17:00:00.0 | 2026-06-22T08:00:00.0 | 2026-06-29T08:00:00.0 | 89 |  | 2025-10-20T08:00:00.0 | 1.7.3.2 | PRORATED | True | True | Task | True | 79b32276-92ad-f011-8312-3c219cc9efd1 | True | PRORATED | 144000 | 2026-06-26T17:00:00.0 | 2026-06-22T08:00:00.0 | True | 2026-06-26T17:00:00.0 | True | 89 | 4 | bcb32276-92ad-f011-8312-3c219cc9efd1 | 87 | 2 |  |  | 2026-06-22T08:00:00.0 |  | 83 84 89 FS |  | 2026-06-22T08:00:00.0 |  |  |
| 2026-06-22T08:00:00.0 | ed | PVT Review | 1.7.4 | START_NO_EARLIER_THAN |  | 500 | 230400 | 230400 | 2026-06-22T08:00:00.0 | 2026-07-01T17:00:00.0 | 2026-06-29T08:00:00.0 | 2026-07-08T08:00:00.0 | 90 | True | 2025-10-20T08:00:00.0 | 1.7.4 | PRORATED | True | True | Phase | True | 7ab32276-92ad-f011-8312-3c219cc9efd1 | True | PRORATED | 230400 | 2026-07-01T17:00:00.0 | 2026-06-22T08:00:00.0 | True | 2026-07-01T17:00:00.0 | True | 90 | 3 | bcb32276-92ad-f011-8312-3c219cc9efd1 | 66 | 2 | 93 90 99 FS, 98 90 100 FS | 115200 | 2026-06-22T08:00:00.0 | 115200 |  | 144000 |  | 115200 |  |
| 2026-06-29T08:00:00.0 | ed | Driver Review(DQV) | 1.7.4.1 | START_NO_EARLIER_THAN |  | 500 | 28800 | 28800 | 2026-06-29T08:00:00.0 | 2026-06-29T17:00:00.0 | 2026-07-07T08:00:00.0 | 2026-07-08T08:00:00.0 | 91 |  | 2025-10-20T08:00:00.0 | 1.7.4.1 | PRORATED | True | True | Task | True | 7bb32276-92ad-f011-8312-3c219cc9efd1 | True | PRORATED | 28800 | 2026-06-29T17:00:00.0 | 2026-06-29T08:00:00.0 | True | 2026-06-29T17:00:00.0 | True | 91 | 4 | bcb32276-92ad-f011-8312-3c219cc9efd1 | 90 | 2 |  | 172800 | 2026-06-29T08:00:00.0 | 172800 | 84 87 91 FS | 172800 | 2026-06-26T17:00:00.0 | 172800 |  |
| 2026-06-29T08:00:00.0 | ed | Design Document(ME) | 1.7.4.2 | START_NO_EARLIER_THAN |  | 500 | 28800 | 28800 | 2026-06-29T08:00:00.0 | 2026-06-29T17:00:00.0 | 2026-07-07T08:00:00.0 | 2026-07-08T08:00:00.0 | 92 |  | 2025-10-20T08:00:00.0 | 1.7.4.2 | PRORATED | True | True | Task | True | 7cb32276-92ad-f011-8312-3c219cc9efd1 | True | PRORATED | 28800 | 2026-06-29T17:00:00.0 | 2026-06-29T08:00:00.0 | True | 2026-06-29T17:00:00.0 | True | 92 | 4 | bcb32276-92ad-f011-8312-3c219cc9efd1 | 90 | 2 |  | 172800 | 2026-06-29T08:00:00.0 | 172800 | 85 87 92 FS | 172800 | 2026-06-26T17:00:00.0 | 172800 |  |
| 2026-06-29T08:00:00.0 | ed | Design Document(HW) | 1.7.4.3 | START_NO_EARLIER_THAN |  | 500 | 28800 | 28800 | 2026-06-29T08:00:00.0 | 2026-06-29T17:00:00.0 | 2026-07-07T08:00:00.0 | 2026-07-08T08:00:00.0 | 93 |  | 2025-10-20T08:00:00.0 | 1.7.4.3 | PRORATED | True | True | Task | True | 7db32276-92ad-f011-8312-3c219cc9efd1 | True | PRORATED | 28800 | 2026-06-29T17:00:00.0 | 2026-06-29T08:00:00.0 | True | 2026-06-29T17:00:00.0 | True | 93 | 4 | bcb32276-92ad-f011-8312-3c219cc9efd1 | 90 | 2 |  | 172800 | 2026-06-29T08:00:00.0 | 172800 | 86 87 93 FS | 172800 | 2026-06-26T17:00:00.0 | 172800 |  |
| 2026-06-29T08:00:00.0 | ed | Production Trial Run Report(QO4-142)(Board PE) | 1.7.4.4 | START_NO_EARLIER_THAN | True | 500 | 57600 | 57600 | 2026-06-29T08:00:00.0 | 2026-06-30T17:00:00.0 | 2026-06-29T08:00:00.0 | 2026-07-01T08:00:00.0 | 94 |  | 2025-10-20T08:00:00.0 | 1.7.4.4 | PRORATED | True | True | Task | True | 7eb32276-92ad-f011-8312-3c219cc9efd1 | True | PRORATED | 57600 | 2026-06-30T17:00:00.0 | 2026-06-29T08:00:00.0 | True | 2026-06-30T17:00:00.0 | True | 94 | 4 | bcb32276-92ad-f011-8312-3c219cc9efd1 | 90 | 2 | 133 94 146 FS, 134 94 147 FS, 135 94 148 FS, 136 94 149 FS, 137 94 150 FS, 138 94 151 FS |  | 2026-06-29T08:00:00.0 |  | 87 87 94 FS |  | 2026-06-26T17:00:00.0 |  |  |
| 2026-06-29T08:00:00.0 | ed | Board DFT Report(QO4-133)(Board PE) | 1.7.4.5 | START_NO_EARLIER_THAN |  | 500 | 86400 | 86400 | 2026-06-29T08:00:00.0 | 2026-07-01T17:00:00.0 | 2026-07-03T08:00:00.0 | 2026-07-08T08:00:00.0 | 95 |  | 2025-10-20T08:00:00.0 | 1.7.4.5 | PRORATED | True | True | Task | True | 7fb32276-92ad-f011-8312-3c219cc9efd1 | True | PRORATED | 86400 | 2026-07-01T17:00:00.0 | 2026-06-29T08:00:00.0 | True | 2026-07-01T17:00:00.0 | True | 95 | 4 | bcb32276-92ad-f011-8312-3c219cc9efd1 | 90 | 2 |  | 115200 | 2026-06-29T08:00:00.0 | 115200 | 88 87 95 FS | 115200 | 2026-06-26T17:00:00.0 | 115200 |  |
| 2026-06-29T08:00:00.0 | ed | Board DFM Report(QO4-091),PCBA Production Report(QO4-135)(SMT ME) | 1.7.4.6 | START_NO_EARLIER_THAN |  | 500 | 86400 | 86400 | 2026-06-29T08:00:00.0 | 2026-07-01T17:00:00.0 | 2026-07-03T08:00:00.0 | 2026-07-08T08:00:00.0 | 96 |  | 2025-10-20T08:00:00.0 | 1.7.4.6 | PRORATED | True | True | Task | True | 80b32276-92ad-f011-8312-3c219cc9efd1 | True | PRORATED | 86400 | 2026-07-01T17:00:00.0 | 2026-06-29T08:00:00.0 | True | 2026-07-01T17:00:00.0 | True | 96 | 4 | bcb32276-92ad-f011-8312-3c219cc9efd1 | 90 | 2 |  | 115200 | 2026-06-29T08:00:00.0 | 115200 | 89 87 96 FS | 115200 | 2026-06-26T17:00:00.0 | 115200 |  |
| 2026-06-22T08:00:00.0 | ed | Completed All New Product Verification Plans[完成所有新產品驗證計劃](EMC) | 1.7.4.7 | START_NO_EARLIER_THAN |  | 500 | 144000 | 144000 | 2026-06-22T08:00:00.0 | 2026-06-26T17:00:00.0 | 2026-06-29T08:00:00.0 | 2026-07-06T08:00:00.0 | 97 |  | 2025-10-20T08:00:00.0 | 1.7.4.7 | PRORATED | True | True | Task | True | 81b32276-92ad-f011-8312-3c219cc9efd1 | True | PRORATED | 144000 | 2026-06-26T17:00:00.0 | 2026-06-22T08:00:00.0 | True | 2026-06-26T17:00:00.0 | True | 97 | 4 | bcb32276-92ad-f011-8312-3c219cc9efd1 | 90 | 2 | 139 97 153 FS, 140 97 154 FS | 144000 | 2026-06-22T08:00:00.0 | 144000 | 90 84 97 FS | 144000 | 2026-06-22T08:00:00.0 |  |  |
| 2026-07-08T08:00:00.0 | ed | Conclusion for MP | 1.7.5 | START_NO_EARLIER_THAN | True | 500 | 57600 | 57600 | 2026-07-08T08:00:00.0 | 2026-07-09T17:00:00.0 | 2026-07-08T08:00:00.0 | 2026-07-09T17:00:00.0 | 98 | True | 2025-10-20T08:00:00.0 | 1.7.5 | PRORATED | True | True | Phase | True | 82b32276-92ad-f011-8312-3c219cc9efd1 | True | PRORATED | 57600 | 2026-07-09T17:00:00.0 | 2026-07-08T08:00:00.0 | True | 2026-07-09T17:00:00.0 | True | 98 | 3 | bcb32276-92ad-f011-8312-3c219cc9efd1 | 66 | 2 | 101 98 101 FS |  | 2026-07-08T08:00:00.0 |  |  |  |  |  |  |
| 2026-07-08T08:00:00.0 | ed | New Product Mass Production Final Report(QD4-027)(PM) | 1.7.5.1 | START_NO_EARLIER_THAN | True | 500 | 57600 | 57600 | 2026-07-08T08:00:00.0 | 2026-07-09T17:00:00.0 | 2026-07-08T08:00:00.0 | 2026-07-09T17:00:00.0 | 99 |  | 2025-10-20T08:00:00.0 | 1.7.5.1 | PRORATED | True | True | Task | True | 83b32276-92ad-f011-8312-3c219cc9efd1 | True | PRORATED | 57600 | 2026-07-09T17:00:00.0 | 2026-07-08T08:00:00.0 | True | 2026-07-09T17:00:00.0 | True | 99 | 4 | bcb32276-92ad-f011-8312-3c219cc9efd1 | 98 | 2 |  |  | 2026-07-08T08:00:00.0 |  | 91 110 99 FS, 92 135 99 FS, 93 90 99 FS, 94 87 99 FS, 95 83 99 FS |  | 2026-07-08T08:00:00.0 |  |  |
| 2026-07-08T08:00:00.0 | ed | C4 Close Review Meeting Minutes(QD4-067)(PM) | 1.7.5.2 | START_NO_EARLIER_THAN | True | 500 | 57600 | 57600 | 2026-07-08T08:00:00.0 | 2026-07-09T17:00:00.0 | 2026-07-08T08:00:00.0 | 2026-07-09T17:00:00.0 | 100 |  | 2025-10-20T08:00:00.0 | 1.7.5.2 | PRORATED | True | True | Task | True | 84b32276-92ad-f011-8312-3c219cc9efd1 | True | PRORATED | 57600 | 2026-07-09T17:00:00.0 | 2026-07-08T08:00:00.0 | True | 2026-07-09T17:00:00.0 | True | 100 | 4 | bcb32276-92ad-f011-8312-3c219cc9efd1 | 98 | 2 |  |  | 2026-07-08T08:00:00.0 |  | 96 110 100 FS, 97 135 100 FS, 98 90 100 FS, 99 87 100 FS, 100 83 100 FS |  | 2026-07-08T08:00:00.0 |  |  |
| 2026-07-09T17:00:00.0 | ed | C4 PDC Check(PDC) | 1.8 | START_NO_EARLIER_THAN | True | 500 |  |  | 2026-07-09T17:00:00.0 | 2026-07-09T17:00:00.0 | 2026-07-09T17:00:00.0 | 2026-07-09T17:00:00.0 | 101 |  | 2025-10-20T08:00:00.0 | 1.8 | PRORATED | True | True | Gate | True | 85b32276-92ad-f011-8312-3c219cc9efd1 | True | PRORATED |  | 2026-07-09T17:00:00.0 | 2026-07-09T17:00:00.0 | True | 2026-07-09T17:00:00.0 | True | 101 | 2 | bcb32276-92ad-f011-8312-3c219cc9efd1 | 1 | 2 |  |  | 2026-07-09T17:00:00.0 |  | 101 98 101 FS |  | 2026-07-09T17:00:00.0 |  | True |
| 2025-10-22T08:00:00.0 | ed | ODM Phase | 1.9 | START_NO_EARLIER_THAN |  | 500 | 4838400 | 4838400 | 2025-10-22T08:00:00.0 | 2026-07-01T17:00:00.0 | 2025-10-23T08:00:00.0 | 2026-07-08T08:00:00.0 | 102 | True | 2025-10-20T08:00:00.0 | 1.9 | PRORATED | True | True | Phase | True | 86b32276-92ad-f011-8312-3c219cc9efd1 | True | PRORATED | 4838400 | 2026-07-01T17:00:00.0 | 2025-10-22T08:00:00.0 | True | 2026-07-01T17:00:00.0 | True | 102 | 2 | bcb32276-92ad-f011-8312-3c219cc9efd1 | 1 | 2 |  | 115200 | 2025-10-22T08:00:00.0 | 28800 |  | 28800 |  | 28800 |  |
| 2025-10-22T08:00:00.0 | ed | ODM P0/P1 | 1.9.1 | START_NO_EARLIER_THAN |  | 500 | 57600 | 57600 | 2025-10-22T08:00:00.0 | 2025-10-23T17:00:00.0 | 2025-10-23T08:00:00.0 | 2025-10-28T08:00:00.0 | 103 | True | 2025-10-20T08:00:00.0 | 1.9.1 | PRORATED | True | True | Phase | True | 87b32276-92ad-f011-8312-3c219cc9efd1 | True | PRORATED | 57600 | 2025-10-23T17:00:00.0 | 2025-10-22T08:00:00.0 | True | 2025-10-23T17:00:00.0 | True | 103 | 3 | bcb32276-92ad-f011-8312-3c219cc9efd1 | 102 | 2 | 13 103 16 FS | 28800 | 2025-10-22T08:00:00.0 | 28800 |  | 28800 |  | 28800 |  |
| 2025-10-22T08:00:00.0 | ed | NRE Remittance Form(or Other Supporting Documents)(Sales) | 1.9.1.1 | START_NO_EARLIER_THAN |  | 500 | 57600 | 57600 | 2025-10-22T08:00:00.0 | 2025-10-23T17:00:00.0 | 2025-10-23T08:00:00.0 | 2025-10-28T08:00:00.0 | 104 |  | 2025-10-20T08:00:00.0 | 1.9.1.1 | PRORATED | True | True | Task | True | 88b32276-92ad-f011-8312-3c219cc9efd1 | True | PRORATED | 57600 | 2025-10-23T17:00:00.0 | 2025-10-22T08:00:00.0 | True | 2025-10-23T17:00:00.0 | True | 104 | 4 | bcb32276-92ad-f011-8312-3c219cc9efd1 | 103 | 2 |  | 28800 | 2025-10-22T08:00:00.0 | 28800 | 102 4 104 FS | 28800 | 2025-10-22T08:00:00.0 | 28800 |  |
| 2026-01-19T08:00:00.0 | ed | ODM P2 | 1.9.2 | START_NO_EARLIER_THAN | True | 500 | 432000 | 432000 | 2026-01-19T08:00:00.0 | 2026-02-06T17:00:00.0 | 2026-01-19T08:00:00.0 | 2026-02-09T08:00:00.0 | 105 | True | 2025-10-20T08:00:00.0 | 1.9.2 | PRORATED | True | True | Phase | True | 89b32276-92ad-f011-8312-3c219cc9efd1 | True | PRORATED | 432000 | 2026-02-06T17:00:00.0 | 2026-01-19T08:00:00.0 | True | 2026-02-06T17:00:00.0 | True | 105 | 3 | bcb32276-92ad-f011-8312-3c219cc9efd1 | 102 | 2 | 32 105 39 FS |  | 2026-01-19T08:00:00.0 |  |  |  |  |  |  |
| 2026-01-19T08:00:00.0 | ed | ODM Contract Copy(Sales) | 1.9.2.1 | START_NO_EARLIER_THAN |  | 500 | 144000 | 144000 | 2026-01-19T08:00:00.0 | 2026-01-23T17:00:00.0 | 2026-02-02T08:00:00.0 | 2026-02-09T08:00:00.0 | 106 |  | 2025-10-20T08:00:00.0 | 1.9.2.1 | PRORATED | True | True | Task | True | 8ab32276-92ad-f011-8312-3c219cc9efd1 | True | PRORATED | 144000 | 2026-01-23T17:00:00.0 | 2026-01-19T08:00:00.0 | True | 2026-01-23T17:00:00.0 | True | 106 | 4 | bcb32276-92ad-f011-8312-3c219cc9efd1 | 105 | 2 |  | 288000 | 2026-01-19T08:00:00.0 | 288000 | 103 31 106 FS | 288000 | 2026-01-19T08:00:00.0 | 288000 |  |
| 2026-01-19T08:00:00.0 | ed | EVT ODM Approval Sheet(QD4-052)(Sales) | 1.9.2.2 | START_NO_EARLIER_THAN | True | 500 | 432000 | 432000 | 2026-01-19T08:00:00.0 | 2026-02-06T17:00:00.0 | 2026-01-19T08:00:00.0 | 2026-02-09T08:00:00.0 | 107 |  | 2025-10-20T08:00:00.0 | 1.9.2.2 | PRORATED | True | True | Task | True | 8bb32276-92ad-f011-8312-3c219cc9efd1 | True | PRORATED | 432000 | 2026-02-06T17:00:00.0 | 2026-01-19T08:00:00.0 | True | 2026-02-06T17:00:00.0 | True | 107 | 4 | bcb32276-92ad-f011-8312-3c219cc9efd1 | 105 | 2 |  |  | 2026-01-19T08:00:00.0 |  | 104 31 107 FS |  | 2026-01-19T08:00:00.0 |  |  |
| 2026-04-22T08:00:00.0 | ed | ODM P3 | 1.9.3 | START_NO_EARLIER_THAN | True | 500 | 432000 | 432000 | 2026-04-22T08:00:00.0 | 2026-05-13T17:00:00.0 | 2026-04-22T08:00:00.0 | 2026-05-14T08:00:00.0 | 108 | True | 2025-10-20T08:00:00.0 | 1.9.3 | PRORATED | True | True | Phase | True | 8cb32276-92ad-f011-8312-3c219cc9efd1 | True | PRORATED | 432000 | 2026-05-13T17:00:00.0 | 2026-04-22T08:00:00.0 | True | 2026-05-13T17:00:00.0 | True | 108 | 3 | bcb32276-92ad-f011-8312-3c219cc9efd1 | 102 | 2 | 54 108 64 FS |  | 2026-04-22T08:00:00.0 |  |  |  |  |  |  |
| 2026-04-22T08:00:00.0 | ed | DVT ODM Approval Sheet(QD4-052)(Sales) | 1.9.3.1 | START_NO_EARLIER_THAN | True | 500 | 432000 | 432000 | 2026-04-22T08:00:00.0 | 2026-05-13T17:00:00.0 | 2026-04-22T08:00:00.0 | 2026-05-14T08:00:00.0 | 109 |  | 2025-10-20T08:00:00.0 | 1.9.3.1 | PRORATED | True | True | Task | True | 8db32276-92ad-f011-8312-3c219cc9efd1 | True | PRORATED | 432000 | 2026-05-13T17:00:00.0 | 2026-04-22T08:00:00.0 | True | 2026-05-13T17:00:00.0 | True | 109 | 4 | bcb32276-92ad-f011-8312-3c219cc9efd1 | 108 | 2 |  |  | 2026-04-22T08:00:00.0 |  | 105 53 109 FS |  | 2026-04-22T08:00:00.0 |  |  |
| 2026-06-22T08:00:00.0 | ed | ODM P4 | 1.9.4 | START_NO_EARLIER_THAN |  | 500 | 230400 | 230400 | 2026-06-22T08:00:00.0 | 2026-07-01T17:00:00.0 | 2026-06-26T08:00:00.0 | 2026-07-08T08:00:00.0 | 110 | True | 2025-10-20T08:00:00.0 | 1.9.4 | PRORATED | True | True | Phase | True | 8eb32276-92ad-f011-8312-3c219cc9efd1 | True | PRORATED | 230400 | 2026-07-01T17:00:00.0 | 2026-06-22T08:00:00.0 | True | 2026-07-01T17:00:00.0 | True | 110 | 3 | bcb32276-92ad-f011-8312-3c219cc9efd1 | 102 | 2 | 91 110 99 FS, 96 110 100 FS | 115200 | 2026-06-22T08:00:00.0 | 115200 |  | 115200 |  | 115200 |  |
| 2026-06-22T08:00:00.0 | ed | PVT ODM Approval Sheet(QD4-052)(Sales) | 1.9.4.1 | START_NO_EARLIER_THAN |  | 500 | 230400 | 230400 | 2026-06-22T08:00:00.0 | 2026-07-01T17:00:00.0 | 2026-06-26T08:00:00.0 | 2026-07-08T08:00:00.0 | 111 |  | 2025-10-20T08:00:00.0 | 1.9.4.1 | PRORATED | True | True | Task | True | 8fb32276-92ad-f011-8312-3c219cc9efd1 | True | PRORATED | 230400 | 2026-07-01T17:00:00.0 | 2026-06-22T08:00:00.0 | True | 2026-07-01T17:00:00.0 | True | 111 | 4 | bcb32276-92ad-f011-8312-3c219cc9efd1 | 110 | 2 |  | 115200 | 2026-06-22T08:00:00.0 | 115200 | 106 84 111 FS | 115200 | 2026-06-22T08:00:00.0 | 115200 |  |
| 2025-10-20T08:00:00.0 | ed | Medical Phase | 1.10 | AS_SOON_AS_POSSIBLE | True | 500 | 5011200 | 5011200 | 2025-10-20T08:00:00.0 | 2026-07-07T17:00:00.0 | 2025-10-20T08:00:00.0 | 2026-07-08T08:00:00.0 | 112 | True | 2025-10-20T08:00:00.0 | 1.10 | PRORATED | True | True | Phase | True | 90b32276-92ad-f011-8312-3c219cc9efd1 | True | PRORATED | 5011200 | 2026-07-07T17:00:00.0 | 2025-10-20T08:00:00.0 | True | 2026-07-07T17:00:00.0 | True | 112 | 2 | bcb32276-92ad-f011-8312-3c219cc9efd1 | 1 | 2 |  |  |  |  |  |  |  |  |  |
| 2025-10-20T08:00:00.0 | ed | Medical P0/P1 | 1.10.1 | AS_SOON_AS_POSSIBLE | True | 500 | 144000 | 144000 | 2025-10-20T08:00:00.0 | 2025-10-27T17:00:00.0 | 2025-10-20T08:00:00.0 | 2025-10-28T08:00:00.0 | 113 | True | 2025-10-20T08:00:00.0 | 1.10.1 | PRORATED | True | True | Phase | True | 91b32276-92ad-f011-8312-3c219cc9efd1 | True | PRORATED | 144000 | 2025-10-27T17:00:00.0 | 2025-10-20T08:00:00.0 | True | 2025-10-27T17:00:00.0 | True | 113 | 3 | bcb32276-92ad-f011-8312-3c219cc9efd1 | 112 | 2 | 12 113 16 FS |  |  |  |  |  |  |  |  |
| 2025-10-20T08:00:00.0 | ed | Risk Management Report(QD4-035),Risk Management Plan(QD4-104)(PM) | 1.10.1.1 | AS_SOON_AS_POSSIBLE | True | 500 | 144000 | 144000 | 2025-10-20T08:00:00.0 | 2025-10-27T17:00:00.0 | 2025-10-20T08:00:00.0 | 2025-10-28T08:00:00.0 | 114 |  | 2025-10-20T08:00:00.0 | 1.10.1.1 | PRORATED | True | True | Task | True | 92b32276-92ad-f011-8312-3c219cc9efd1 | True | PRORATED | 144000 | 2025-10-27T17:00:00.0 | 2025-10-20T08:00:00.0 | True | 2025-10-27T17:00:00.0 | True | 114 | 4 | bcb32276-92ad-f011-8312-3c219cc9efd1 | 113 | 2 |  |  |  |  | 107 4 114 -57600 FS |  | 2025-10-20T08:00:00.0 |  |  |
| 2025-11-18T08:00:00.0 | ed | Medical P2 | 1.10.2 | START_NO_EARLIER_THAN |  | 500 | 1209600 | 1209600 | 2025-11-18T08:00:00.0 | 2026-01-16T17:00:00.0 | 2026-02-04T08:00:00.0 | 2026-02-09T08:00:00.0 | 115 | True | 2025-10-20T08:00:00.0 | 1.10.2 | PRORATED | True | True | Phase | True | 93b32276-92ad-f011-8312-3c219cc9efd1 | True | PRORATED | 1209600 | 2026-01-16T17:00:00.0 | 2025-11-18T08:00:00.0 | True | 2026-01-16T17:00:00.0 | True | 115 | 3 | bcb32276-92ad-f011-8312-3c219cc9efd1 | 112 | 2 | 33 115 40 FS | 432000 | 2025-11-18T08:00:00.0 | 432000 |  | 1555200 |  | 432000 |  |
| 2025-11-18T08:00:00.0 | ed | FMEA P2 | 1.10.2.1 | START_NO_EARLIER_THAN |  | 500 | 86400 | 86400 | 2025-11-18T08:00:00.0 | 2025-11-20T17:00:00.0 | 2026-02-04T08:00:00.0 | 2026-02-09T08:00:00.0 | 116 | True | 2025-10-20T08:00:00.0 | 1.10.2.1 | PRORATED | True | True | Phase | True | 94b32276-92ad-f011-8312-3c219cc9efd1 | True | PRORATED | 86400 | 2025-11-20T17:00:00.0 | 2025-11-18T08:00:00.0 | True | 2025-11-20T17:00:00.0 | True | 116 | 4 | bcb32276-92ad-f011-8312-3c219cc9efd1 | 115 | 2 |  | 1555200 | 2025-11-18T08:00:00.0 | 1555200 |  | 1555200 |  | 1555200 |  |
| 2025-11-18T08:00:00.0 | ed | P2 FMEA(QD4-076)(HW) | 1.10.2.1.1 | START_NO_EARLIER_THAN |  | 500 | 86400 | 86400 | 2025-11-18T08:00:00.0 | 2025-11-20T17:00:00.0 | 2026-02-04T08:00:00.0 | 2026-02-09T08:00:00.0 | 117 |  | 2025-10-20T08:00:00.0 | 1.10.2.1.1 | PRORATED | True | True | Task | True | 95b32276-92ad-f011-8312-3c219cc9efd1 | True | PRORATED | 86400 | 2025-11-20T17:00:00.0 | 2025-11-18T08:00:00.0 | True | 2025-11-20T17:00:00.0 | True | 117 | 5 | bcb32276-92ad-f011-8312-3c219cc9efd1 | 116 | 2 |  | 1555200 | 2025-11-18T08:00:00.0 | 1555200 | 108 22 117 FS | 1555200 | 2025-11-18T08:00:00.0 | 1555200 |  |
| 2025-11-18T08:00:00.0 | ed | P2 FMEA(QD4-076)(BIOS) | 1.10.2.1.2 | START_NO_EARLIER_THAN |  | 500 | 86400 | 86400 | 2025-11-18T08:00:00.0 | 2025-11-20T17:00:00.0 | 2026-02-04T08:00:00.0 | 2026-02-09T08:00:00.0 | 118 |  | 2025-10-20T08:00:00.0 | 1.10.2.1.2 | PRORATED | True | True | Task | True | 96b32276-92ad-f011-8312-3c219cc9efd1 | True | PRORATED | 86400 | 2025-11-20T17:00:00.0 | 2025-11-18T08:00:00.0 | True | 2025-11-20T17:00:00.0 | True | 118 | 5 | bcb32276-92ad-f011-8312-3c219cc9efd1 | 116 | 2 |  | 1555200 | 2025-11-18T08:00:00.0 | 1555200 | 109 22 118 FS | 1555200 | 2025-11-18T08:00:00.0 | 1555200 |  |
| 2025-11-18T08:00:00.0 | ed | P2 FMEA(QD4-076)(ARM SW) | 1.10.2.1.3 | START_NO_EARLIER_THAN |  | 500 | 86400 | 86400 | 2025-11-18T08:00:00.0 | 2025-11-20T17:00:00.0 | 2026-02-04T08:00:00.0 | 2026-02-09T08:00:00.0 | 119 |  | 2025-10-20T08:00:00.0 | 1.10.2.1.3 | PRORATED | True | True | Task | True | 97b32276-92ad-f011-8312-3c219cc9efd1 | True | PRORATED | 86400 | 2025-11-20T17:00:00.0 | 2025-11-18T08:00:00.0 | True | 2025-11-20T17:00:00.0 | True | 119 | 5 | bcb32276-92ad-f011-8312-3c219cc9efd1 | 116 | 2 |  | 1555200 | 2025-11-18T08:00:00.0 | 1555200 | 110 22 119 FS | 1555200 | 2025-11-18T08:00:00.0 | 1555200 |  |
| 2025-11-18T08:00:00.0 | ed | P2 FMEA(QD4-076)(EC) | 1.10.2.1.4 | START_NO_EARLIER_THAN |  | 500 | 86400 | 86400 | 2025-11-18T08:00:00.0 | 2025-11-20T17:00:00.0 | 2026-02-04T08:00:00.0 | 2026-02-09T08:00:00.0 | 120 |  | 2025-10-20T08:00:00.0 | 1.10.2.1.4 | PRORATED | True | True | Task | True | 98b32276-92ad-f011-8312-3c219cc9efd1 | True | PRORATED | 86400 | 2025-11-20T17:00:00.0 | 2025-11-18T08:00:00.0 | True | 2025-11-20T17:00:00.0 | True | 120 | 5 | bcb32276-92ad-f011-8312-3c219cc9efd1 | 116 | 2 |  | 1555200 | 2025-11-18T08:00:00.0 | 1555200 | 111 22 120 FS | 1555200 | 2025-11-18T08:00:00.0 | 1555200 |  |
| 2025-11-18T08:00:00.0 | ed | P2 FMEA(QD4-076)(ME) | 1.10.2.1.5 | START_NO_EARLIER_THAN |  | 500 | 86400 | 86400 | 2025-11-18T08:00:00.0 | 2025-11-20T17:00:00.0 | 2026-02-04T08:00:00.0 | 2026-02-09T08:00:00.0 | 121 |  | 2025-10-20T08:00:00.0 | 1.10.2.1.5 | PRORATED | True | True | Task | True | 99b32276-92ad-f011-8312-3c219cc9efd1 | True | PRORATED | 86400 | 2025-11-20T17:00:00.0 | 2025-11-18T08:00:00.0 | True | 2025-11-20T17:00:00.0 | True | 121 | 5 | bcb32276-92ad-f011-8312-3c219cc9efd1 | 116 | 2 |  | 1555200 | 2025-11-18T08:00:00.0 | 1555200 | 112 22 121 FS | 1555200 | 2025-11-18T08:00:00.0 | 1555200 |  |
| 2026-01-15T08:00:00.0 | ed | Software Validation Report(QD4-089)(BIOS) | 1.10.2.2 | START_NO_EARLIER_THAN |  | 500 | 57600 | 57600 | 2026-01-15T08:00:00.0 | 2026-01-16T17:00:00.0 | 2026-02-05T08:00:00.0 | 2026-02-09T08:00:00.0 | 122 |  | 2025-10-20T08:00:00.0 | 1.10.2.2 | PRORATED | True | True | Task | True | 9ab32276-92ad-f011-8312-3c219cc9efd1 | True | PRORATED | 57600 | 2026-01-16T17:00:00.0 | 2026-01-15T08:00:00.0 | True | 2026-01-16T17:00:00.0 | True | 122 | 4 | bcb32276-92ad-f011-8312-3c219cc9efd1 | 115 | 2 |  | 432000 | 2026-01-15T08:00:00.0 | 432000 | 113 35 122 FS | 432000 | 2026-01-14T17:00:00.0 | 432000 |  |
| 2026-01-15T08:00:00.0 | ed | Software Validation Report(QD4-089)(ARM SW) | 1.10.2.3 | START_NO_EARLIER_THAN |  | 500 | 57600 | 57600 | 2026-01-15T08:00:00.0 | 2026-01-16T17:00:00.0 | 2026-02-05T08:00:00.0 | 2026-02-09T08:00:00.0 | 123 |  | 2025-10-20T08:00:00.0 | 1.10.2.3 | PRORATED | True | True | Task | True | 9bb32276-92ad-f011-8312-3c219cc9efd1 | True | PRORATED | 57600 | 2026-01-16T17:00:00.0 | 2026-01-15T08:00:00.0 | True | 2026-01-16T17:00:00.0 | True | 123 | 4 | bcb32276-92ad-f011-8312-3c219cc9efd1 | 115 | 2 |  | 432000 | 2026-01-15T08:00:00.0 | 432000 | 114 35 123 FS | 432000 | 2026-01-14T17:00:00.0 | 432000 |  |
| 2026-02-13T08:00:00.0 | ed | Medical P3 | 1.10.3 | START_NO_EARLIER_THAN |  | 500 | 1296000 | 1296000 | 2026-02-13T08:00:00.0 | 2026-04-28T17:00:00.0 | 2026-05-07T08:00:00.0 | 2026-05-14T08:00:00.0 | 124 | True | 2025-10-20T08:00:00.0 | 1.10.3 | PRORATED | True | True | Phase | True | 9cb32276-92ad-f011-8312-3c219cc9efd1 | True | PRORATED | 1296000 | 2026-04-28T17:00:00.0 | 2026-02-13T08:00:00.0 | True | 2026-04-28T17:00:00.0 | True | 124 | 3 | bcb32276-92ad-f011-8312-3c219cc9efd1 | 112 | 2 | 53 124 64 FS | 288000 | 2026-02-13T08:00:00.0 | 288000 |  | 1440000 |  | 288000 |  |
| 2026-02-13T08:00:00.0 | ed | Process Flow Chart(QO4-052)[作業流程圖](Board PE) | 1.10.3.1 | START_NO_EARLIER_THAN |  | 500 | 86400 | 86400 | 2026-02-13T08:00:00.0 | 2026-02-24T17:00:00.0 | 2026-05-07T08:00:00.0 | 2026-05-12T08:00:00.0 | 125 |  | 2025-10-20T08:00:00.0 | 1.10.3.1 | PRORATED | True | True | Task | True | 9db32276-92ad-f011-8312-3c219cc9efd1 | True | PRORATED | 86400 | 2026-02-24T17:00:00.0 | 2026-02-13T08:00:00.0 | True | 2026-02-24T17:00:00.0 | True | 125 | 4 | bcb32276-92ad-f011-8312-3c219cc9efd1 | 124 | 2 | 123 125 134 FS | 1440000 | 2026-02-13T08:00:00.0 | 1440000 | 115 44 125 FS | 1440000 | 2026-02-13T08:00:00.0 | 1152000 |  |
| 2026-02-13T08:00:00.0 | ed | FMEA P3 | 1.10.3.2 | START_NO_EARLIER_THAN |  | 500 | 1238400 | 1238400 | 2026-02-13T08:00:00.0 | 2026-04-24T17:00:00.0 | 2026-05-07T08:00:00.0 | 2026-05-12T08:00:00.0 | 126 | True | 2025-10-20T08:00:00.0 | 1.10.3.2 | PRORATED | True | True | Phase | True | 9eb32276-92ad-f011-8312-3c219cc9efd1 | True | PRORATED | 1238400 | 2026-04-24T17:00:00.0 | 2026-02-13T08:00:00.0 | True | 2026-04-24T17:00:00.0 | True | 126 | 4 | bcb32276-92ad-f011-8312-3c219cc9efd1 | 124 | 2 | 124 126 134 FS | 288000 | 2026-02-13T08:00:00.0 | 288000 |  | 1440000 |  |  |  |
| 2026-02-13T08:00:00.0 | ed | P3 FMEA(QD4-076)(HW) | 1.10.3.2.1 | START_NO_EARLIER_THAN |  | 500 | 86400 | 86400 | 2026-02-13T08:00:00.0 | 2026-02-24T17:00:00.0 | 2026-05-07T08:00:00.0 | 2026-05-12T08:00:00.0 | 127 |  | 2025-10-20T08:00:00.0 | 1.10.3.2.1 | PRORATED | True | True | Task | True | 9fb32276-92ad-f011-8312-3c219cc9efd1 | True | PRORATED | 86400 | 2026-02-24T17:00:00.0 | 2026-02-13T08:00:00.0 | True | 2026-02-24T17:00:00.0 | True | 127 | 5 | bcb32276-92ad-f011-8312-3c219cc9efd1 | 126 | 2 |  | 1440000 | 2026-02-13T08:00:00.0 | 1440000 | 116 44 127 FS | 1440000 | 2026-02-13T08:00:00.0 | 1440000 |  |
| 2026-02-13T08:00:00.0 | ed | P3 FMEA(QD4-076)(BIOS) | 1.10.3.2.2 | START_NO_EARLIER_THAN |  | 500 | 86400 | 86400 | 2026-02-13T08:00:00.0 | 2026-02-24T17:00:00.0 | 2026-05-07T08:00:00.0 | 2026-05-12T08:00:00.0 | 128 |  | 2025-10-20T08:00:00.0 | 1.10.3.2.2 | PRORATED | True | True | Task | True | a0b32276-92ad-f011-8312-3c219cc9efd1 | True | PRORATED | 86400 | 2026-02-24T17:00:00.0 | 2026-02-13T08:00:00.0 | True | 2026-02-24T17:00:00.0 | True | 128 | 5 | bcb32276-92ad-f011-8312-3c219cc9efd1 | 126 | 2 |  | 1440000 | 2026-02-13T08:00:00.0 | 1440000 | 117 44 128 FS | 1440000 | 2026-02-13T08:00:00.0 | 1440000 |  |
| 2026-02-13T08:00:00.0 | ed | P3 FMEA(QD4-076)(ARM SW) | 1.10.3.2.3 | START_NO_EARLIER_THAN |  | 500 | 86400 | 86400 | 2026-02-13T08:00:00.0 | 2026-02-24T17:00:00.0 | 2026-05-07T08:00:00.0 | 2026-05-12T08:00:00.0 | 129 |  | 2025-10-20T08:00:00.0 | 1.10.3.2.3 | PRORATED | True | True | Task | True | a1b32276-92ad-f011-8312-3c219cc9efd1 | True | PRORATED | 86400 | 2026-02-24T17:00:00.0 | 2026-02-13T08:00:00.0 | True | 2026-02-24T17:00:00.0 | True | 129 | 5 | bcb32276-92ad-f011-8312-3c219cc9efd1 | 126 | 2 |  | 1440000 | 2026-02-13T08:00:00.0 | 1440000 | 118 44 129 FS | 1440000 | 2026-02-13T08:00:00.0 | 1440000 |  |
| 2026-02-13T08:00:00.0 | ed | P3 FMEA(QD4-076)(EC) | 1.10.3.2.4 | START_NO_EARLIER_THAN |  | 500 | 86400 | 86400 | 2026-02-13T08:00:00.0 | 2026-02-24T17:00:00.0 | 2026-05-07T08:00:00.0 | 2026-05-12T08:00:00.0 | 130 |  | 2025-10-20T08:00:00.0 | 1.10.3.2.4 | PRORATED | True | True | Task | True | a2b32276-92ad-f011-8312-3c219cc9efd1 | True | PRORATED | 86400 | 2026-02-24T17:00:00.0 | 2026-02-13T08:00:00.0 | True | 2026-02-24T17:00:00.0 | True | 130 | 5 | bcb32276-92ad-f011-8312-3c219cc9efd1 | 126 | 2 |  | 1440000 | 2026-02-13T08:00:00.0 | 1440000 | 119 44 130 FS | 1440000 | 2026-02-13T08:00:00.0 | 1440000 |  |
| 2026-02-13T08:00:00.0 | ed | P3 FMEA(QD4-076)(ME) | 1.10.3.2.5 | START_NO_EARLIER_THAN |  | 500 | 86400 | 86400 | 2026-02-13T08:00:00.0 | 2026-02-24T17:00:00.0 | 2026-05-07T08:00:00.0 | 2026-05-12T08:00:00.0 | 131 |  | 2025-10-20T08:00:00.0 | 1.10.3.2.5 | PRORATED | True | True | Task | True | a3b32276-92ad-f011-8312-3c219cc9efd1 | True | PRORATED | 86400 | 2026-02-24T17:00:00.0 | 2026-02-13T08:00:00.0 | True | 2026-02-24T17:00:00.0 | True | 131 | 5 | bcb32276-92ad-f011-8312-3c219cc9efd1 | 126 | 2 |  | 1440000 | 2026-02-13T08:00:00.0 | 1440000 | 120 44 131 FS | 1440000 | 2026-02-13T08:00:00.0 | 1440000 |  |
| 2026-04-22T08:00:00.0 | ed | P3 FMEA(QD4-076)(Board PE) | 1.10.3.2.6 | START_NO_EARLIER_THAN |  | 500 | 86400 | 86400 | 2026-04-22T08:00:00.0 | 2026-04-24T17:00:00.0 | 2026-05-07T08:00:00.0 | 2026-05-12T08:00:00.0 | 132 |  | 2025-10-20T08:00:00.0 | 1.10.3.2.6 | PRORATED | True | True | Task | True | a4b32276-92ad-f011-8312-3c219cc9efd1 | True | PRORATED | 86400 | 2026-04-24T17:00:00.0 | 2026-04-22T08:00:00.0 | True | 2026-04-24T17:00:00.0 | True | 132 | 5 | bcb32276-92ad-f011-8312-3c219cc9efd1 | 126 | 2 |  | 288000 | 2026-04-22T08:00:00.0 | 288000 | 121 53 132 FS | 288000 | 2026-04-21T17:00:00.0 | 288000 |  |
| 2026-04-20T08:00:00.0 | ed | Software Validation Report(QD4-089)(DQV) | 1.10.3.3 | START_NO_EARLIER_THAN |  | 500 | 57600 | 57600 | 2026-04-20T08:00:00.0 | 2026-04-21T17:00:00.0 | 2026-05-12T08:00:00.0 | 2026-05-14T08:00:00.0 | 133 |  | 2025-10-20T08:00:00.0 | 1.10.3.3 | PRORATED | True | True | Task | True | a5b32276-92ad-f011-8312-3c219cc9efd1 | True | PRORATED | 57600 | 2026-04-21T17:00:00.0 | 2026-04-20T08:00:00.0 | True | 2026-04-21T17:00:00.0 | True | 133 | 4 | bcb32276-92ad-f011-8312-3c219cc9efd1 | 124 | 2 |  | 432000 | 2026-04-20T08:00:00.0 | 432000 | 122 56 133 FS | 432000 | 2026-04-17T17:00:00.0 | 432000 |  |
| 2026-04-27T08:00:00.0 | ed | QC Flow Chart(QC) | 1.10.3.4 | START_NO_EARLIER_THAN |  | 500 | 57600 | 57600 | 2026-04-27T08:00:00.0 | 2026-04-28T17:00:00.0 | 2026-05-12T08:00:00.0 | 2026-05-14T08:00:00.0 | 134 |  | 2025-10-20T08:00:00.0 | 1.10.3.4 | PRORATED | True | True | Task | True | a6b32276-92ad-f011-8312-3c219cc9efd1 | True | PRORATED | 57600 | 2026-04-28T17:00:00.0 | 2026-04-27T08:00:00.0 | True | 2026-04-28T17:00:00.0 | True | 134 | 4 | bcb32276-92ad-f011-8312-3c219cc9efd1 | 124 | 2 |  | 288000 | 2026-04-27T08:00:00.0 | 288000 | 123 125 134 FS, 124 126 134 FS | 288000 | 2026-04-24T17:00:00.0 | 288000 |  |
| 2026-06-29T08:00:00.0 | ed | Medical P4 | 1.10.4 | START_NO_EARLIER_THAN | True | 500 | 201600 | 201600 | 2026-06-29T08:00:00.0 | 2026-07-07T17:00:00.0 | 2026-06-30T08:00:00.0 | 2026-07-08T08:00:00.0 | 135 | True | 2025-10-20T08:00:00.0 | 1.10.4 | PRORATED | True | True | Phase | True | a7b32276-92ad-f011-8312-3c219cc9efd1 | True | PRORATED | 201600 | 2026-07-07T17:00:00.0 | 2026-06-29T08:00:00.0 | True | 2026-07-07T17:00:00.0 | True | 135 | 3 | bcb32276-92ad-f011-8312-3c219cc9efd1 | 112 | 2 | 92 135 99 FS, 97 135 100 FS |  | 2026-06-29T08:00:00.0 |  |  | 28800 |  |  |  |
| 2026-06-29T08:00:00.0 | ed | QC Reports | 1.10.4.1 | START_NO_EARLIER_THAN | True | 500 | 201600 | 201600 | 2026-06-29T08:00:00.0 | 2026-07-07T17:00:00.0 | 2026-06-30T08:00:00.0 | 2026-07-08T08:00:00.0 | 136 | True | 2025-10-20T08:00:00.0 | 1.10.4.1 | PRORATED | True | True | Phase | True | a8b32276-92ad-f011-8312-3c219cc9efd1 | True | PRORATED | 201600 | 2026-07-07T17:00:00.0 | 2026-06-29T08:00:00.0 | True | 2026-07-07T17:00:00.0 | True | 136 | 4 | bcb32276-92ad-f011-8312-3c219cc9efd1 | 135 | 2 |  |  | 2026-06-29T08:00:00.0 |  |  | 28800 |  |  |  |
| 2026-06-29T08:00:00.0 | ed | FAI Report(PCB Impedance)(QC) | 1.10.4.1.1 | START_NO_EARLIER_THAN |  | 500 | 57600 | 57600 | 2026-06-29T08:00:00.0 | 2026-06-30T17:00:00.0 | 2026-07-06T08:00:00.0 | 2026-07-08T08:00:00.0 | 137 |  | 2025-10-20T08:00:00.0 | 1.10.4.1.1 | PRORATED | True | True | Task | True | a9b32276-92ad-f011-8312-3c219cc9efd1 | True | PRORATED | 57600 | 2026-06-30T17:00:00.0 | 2026-06-29T08:00:00.0 | True | 2026-06-30T17:00:00.0 | True | 137 | 5 | bcb32276-92ad-f011-8312-3c219cc9efd1 | 136 | 2 |  | 144000 | 2026-06-29T08:00:00.0 | 144000 | 125 87 137 FS | 144000 | 2026-06-29T08:00:00.0 | 144000 |  |
| 2026-06-29T08:00:00.0 | ed | FAI Report(ME Key Dimensions)(QC) | 1.10.4.1.2 | START_NO_EARLIER_THAN |  | 500 | 57600 | 57600 | 2026-06-29T08:00:00.0 | 2026-06-30T17:00:00.0 | 2026-07-06T08:00:00.0 | 2026-07-08T08:00:00.0 | 138 |  | 2025-10-20T08:00:00.0 | 1.10.4.1.2 | PRORATED | True | True | Task | True | aab32276-92ad-f011-8312-3c219cc9efd1 | True | PRORATED | 57600 | 2026-06-30T17:00:00.0 | 2026-06-29T08:00:00.0 | True | 2026-06-30T17:00:00.0 | True | 138 | 5 | bcb32276-92ad-f011-8312-3c219cc9efd1 | 136 | 2 |  | 144000 | 2026-06-29T08:00:00.0 | 144000 | 126 87 138 FS | 144000 | 2026-06-29T08:00:00.0 | 144000 |  |
| 2026-06-29T08:00:00.0 | ed | Solder Paste Thickness Report(Cpk, X-R Chart)(QC) | 1.10.4.1.3 | START_NO_EARLIER_THAN |  | 500 | 115200 | 115200 | 2026-06-29T08:00:00.0 | 2026-07-02T17:00:00.0 | 2026-06-30T08:00:00.0 | 2026-07-06T08:00:00.0 | 139 |  | 2025-10-20T08:00:00.0 | 1.10.4.1.3 | PRORATED | True | True | Task | True | abb32276-92ad-f011-8312-3c219cc9efd1 | True | PRORATED | 115200 | 2026-07-02T17:00:00.0 | 2026-06-29T08:00:00.0 | True | 2026-07-02T17:00:00.0 | True | 139 | 5 | bcb32276-92ad-f011-8312-3c219cc9efd1 | 136 | 2 | 129 139 140 FS | 28800 | 2026-06-29T08:00:00.0 | 28800 | 127 87 139 FS | 28800 | 2026-06-29T08:00:00.0 | 28800 |  |

| start | leveling_delay_units | name | wbs | constraint_type | critical | priority | duration | remaining_duration | early_start | early_finish | late_start | late_finish | unique_id | summary | created | outline_number | fixed_cost_accrual | leveling_can_split | level_assignments | text29 | ignore_resource_calendar | guid | active | baseline_fixed_cost_accrual | scheduled_duration | scheduled_finish | scheduled_start | recalc_outline_codes | finish | auto_compute_actuals | id | outline_level | task_calendar_guid | parent_task_unique_id | calendar_unique_id | successors | finish_slack | constraint_date | total_slack | predecessors | start_slack | summary_progress | free_slack |
| --- | --- | --- | --- | --- | --- | --- | --- | --- | --- | --- | --- | --- | --- | --- | --- | --- | --- | --- | --- | --- | --- | --- | --- | --- | --- | --- | --- | --- | --- | --- | --- | --- | --- | --- | --- | --- | --- | --- | --- | --- | --- | --- | --- |
| 2026-07-06T08:00:00.0 | ed | QC Flow Chart(QC) | 1.10.4.1.4 | START_NO_EARLIER_THAN | True | 500 | 57600 | 57600 | 2026-07-06T08:00:00.0 | 2026-07-07T17:00:00.0 | 2026-07-06T08:00:00.0 | 2026-07-08T08:00:00.0 | 140 |  | 2025-10-20T08:00:00.0 | 1.10.4.1.4 | PRORATED | True | True | Task | True | acb32276-92ad-f011-8312-3c219cc9efd1 | True | PRORATED | 57600 | 2026-07-07T17:00:00.0 | 2026-07-06T08:00:00.0 | True | 2026-07-07T17:00:00.0 | True | 140 | 5 | bcb32276-92ad-f011-8312-3c219cc9efd1 | 136 | 2 |  |  | 2026-07-06T08:00:00.0 |  | 128 145 140 FS, 129 139 140 FS |  | 2026-07-03T17:00:00.0 |  |
| 2026-06-29T08:00:00.0 | ed | Validation Reports | 1.10.4.2 | START_NO_EARLIER_THAN |  | 500 | 144000 | 144000 | 2026-06-29T08:00:00.0 | 2026-07-03T17:00:00.0 | 2026-07-01T08:00:00.0 | 2026-07-08T08:00:00.0 | 141 | True | 2025-10-20T08:00:00.0 | 1.10.4.2 | PRORATED | True | True | Phase | True | adb32276-92ad-f011-8312-3c219cc9efd1 | True | PRORATED | 144000 | 2026-07-03T17:00:00.0 | 2026-06-29T08:00:00.0 | True | 2026-07-03T17:00:00.0 | True | 141 | 4 | bcb32276-92ad-f011-8312-3c219cc9efd1 | 135 | 2 |  | 57600 | 2026-06-29T08:00:00.0 | 57600 |  | 57600 |  | 57600 |
| 2026-06-29T08:00:00.0 | ed | Software Validation List(QO4-128),Test Software Validation Report(QO4-129)(Board PE) | 1.10.4.2.1 | START_NO_EARLIER_THAN |  | 500 | 57600 | 57600 | 2026-06-29T08:00:00.0 | 2026-06-30T17:00:00.0 | 2026-07-06T08:00:00.0 | 2026-07-08T08:00:00.0 | 142 |  | 2025-10-20T08:00:00.0 | 1.10.4.2.1 | PRORATED | True | True | Task | True | aeb32276-92ad-f011-8312-3c219cc9efd1 | True | PRORATED | 57600 | 2026-06-30T17:00:00.0 | 2026-06-29T08:00:00.0 | True | 2026-06-30T17:00:00.0 | True | 142 | 5 | bcb32276-92ad-f011-8312-3c219cc9efd1 | 141 | 2 |  | 144000 | 2026-06-29T08:00:00.0 | 144000 | 130 87 142 FS | 144000 | 2026-06-29T08:00:00.0 | 144000 |
| 2026-06-29T08:00:00.0 | ed | Production Process Validation Evaluation Report(QO4-124)(SMT ME) | 1.10.4.2.2 | START_NO_EARLIER_THAN |  | 500 | 144000 | 144000 | 2026-06-29T08:00:00.0 | 2026-07-03T17:00:00.0 | 2026-07-01T08:00:00.0 | 2026-07-08T08:00:00.0 | 143 |  | 2025-10-20T08:00:00.0 | 1.10.4.2.2 | PRORATED | True | True | Task | True | afb32276-92ad-f011-8312-3c219cc9efd1 | True | PRORATED | 144000 | 2026-07-03T17:00:00.0 | 2026-06-29T08:00:00.0 | True | 2026-07-03T17:00:00.0 | True | 143 | 5 | bcb32276-92ad-f011-8312-3c219cc9efd1 | 141 | 2 |  | 57600 | 2026-06-29T08:00:00.0 | 57600 | 131 87 143 FS | 57600 | 2026-06-29T08:00:00.0 | 57600 |
| 2026-06-29T08:00:00.0 | ed | Test Software Validation Report(QO4-111)(Board PE) | 1.10.4.2.3 | START_NO_EARLIER_THAN |  | 500 | 144000 | 144000 | 2026-06-29T08:00:00.0 | 2026-07-03T17:00:00.0 | 2026-07-01T08:00:00.0 | 2026-07-08T08:00:00.0 | 144 |  | 2025-10-20T08:00:00.0 | 1.10.4.2.3 | PRORATED | True | True | Task | True | b0b32276-92ad-f011-8312-3c219cc9efd1 | True | PRORATED | 144000 | 2026-07-03T17:00:00.0 | 2026-06-29T08:00:00.0 | True | 2026-07-03T17:00:00.0 | True | 144 | 5 | bcb32276-92ad-f011-8312-3c219cc9efd1 | 141 | 2 |  | 57600 | 2026-06-29T08:00:00.0 | 57600 | 132 87 144 FS | 57600 | 2026-06-29T08:00:00.0 | 57600 |
| 2026-07-01T08:00:00.0 | ed | FMEA P4 | 1.10.4.3 | START_NO_EARLIER_THAN | True | 500 | 86400 | 86400 | 2026-07-01T08:00:00.0 | 2026-07-03T17:00:00.0 | 2026-07-01T08:00:00.0 | 2026-07-06T08:00:00.0 | 145 | True | 2025-10-20T08:00:00.0 | 1.10.4.3 | PRORATED | True | True | Phase | True | b1b32276-92ad-f011-8312-3c219cc9efd1 | True | PRORATED | 86400 | 2026-07-03T17:00:00.0 | 2026-07-01T08:00:00.0 | True | 2026-07-03T17:00:00.0 | True | 145 | 4 | bcb32276-92ad-f011-8312-3c219cc9efd1 | 135 | 2 | 128 145 140 FS |  | 2026-07-01T08:00:00.0 |  |  |  |  |  |
| 2026-07-01T08:00:00.0 | ed | P4 FMEA(QD4-076)(HW) | 1.10.4.3.1 | START_NO_EARLIER_THAN | True | 500 | 86400 | 86400 | 2026-07-01T08:00:00.0 | 2026-07-03T17:00:00.0 | 2026-07-01T08:00:00.0 | 2026-07-06T08:00:00.0 | 146 |  | 2025-10-20T08:00:00.0 | 1.10.4.3.1 | PRORATED | True | True | Task | True | b2b32276-92ad-f011-8312-3c219cc9efd1 | True | PRORATED | 86400 | 2026-07-03T17:00:00.0 | 2026-07-01T08:00:00.0 | True | 2026-07-03T17:00:00.0 | True | 146 | 5 | bcb32276-92ad-f011-8312-3c219cc9efd1 | 145 | 2 |  |  | 2026-07-01T08:00:00.0 |  | 133 94 146 FS |  | 2026-07-01T08:00:00.0 |  |
| 2026-07-01T08:00:00.0 | ed | P4 FMEA(QD4-076)(BIOS) | 1.10.4.3.2 | START_NO_EARLIER_THAN | True | 500 | 86400 | 86400 | 2026-07-01T08:00:00.0 | 2026-07-03T17:00:00.0 | 2026-07-01T08:00:00.0 | 2026-07-06T08:00:00.0 | 147 |  | 2025-10-20T08:00:00.0 | 1.10.4.3.2 | PRORATED | True | True | Task | True | b3b32276-92ad-f011-8312-3c219cc9efd1 | True | PRORATED | 86400 | 2026-07-03T17:00:00.0 | 2026-07-01T08:00:00.0 | True | 2026-07-03T17:00:00.0 | True | 147 | 5 | bcb32276-92ad-f011-8312-3c219cc9efd1 | 145 | 2 |  |  | 2026-07-01T08:00:00.0 |  | 134 94 147 FS |  | 2026-07-01T08:00:00.0 |  |
| 2026-07-01T08:00:00.0 | ed | P4 FMEA(QD4-076)(ARM SW) | 1.10.4.3.3 | START_NO_EARLIER_THAN | True | 500 | 86400 | 86400 | 2026-07-01T08:00:00.0 | 2026-07-03T17:00:00.0 | 2026-07-01T08:00:00.0 | 2026-07-06T08:00:00.0 | 148 |  | 2025-10-20T08:00:00.0 | 1.10.4.3.3 | PRORATED | True | True | Task | True | b4b32276-92ad-f011-8312-3c219cc9efd1 | True | PRORATED | 86400 | 2026-07-03T17:00:00.0 | 2026-07-01T08:00:00.0 | True | 2026-07-03T17:00:00.0 | True | 148 | 5 | bcb32276-92ad-f011-8312-3c219cc9efd1 | 145 | 2 |  |  | 2026-07-01T08:00:00.0 |  | 135 94 148 FS |  | 2026-07-01T08:00:00.0 |  |
| 2026-07-01T08:00:00.0 | ed | P4 FMEA(QD4-076)(EC) | 1.10.4.3.4 | START_NO_EARLIER_THAN | True | 500 | 86400 | 86400 | 2026-07-01T08:00:00.0 | 2026-07-03T17:00:00.0 | 2026-07-01T08:00:00.0 | 2026-07-06T08:00:00.0 | 149 |  | 2025-10-20T08:00:00.0 | 1.10.4.3.4 | PRORATED | True | True | Task | True | b5b32276-92ad-f011-8312-3c219cc9efd1 | True | PRORATED | 86400 | 2026-07-03T17:00:00.0 | 2026-07-01T08:00:00.0 | True | 2026-07-03T17:00:00.0 | True | 149 | 5 | bcb32276-92ad-f011-8312-3c219cc9efd1 | 145 | 2 |  |  | 2026-07-01T08:00:00.0 |  | 136 94 149 FS |  | 2026-07-01T08:00:00.0 |  |
| 2026-07-01T08:00:00.0 | ed | P4 FMEA(QD4-076)(ME) | 1.10.4.3.5 | START_NO_EARLIER_THAN | True | 500 | 86400 | 86400 | 2026-07-01T08:00:00.0 | 2026-07-03T17:00:00.0 | 2026-07-01T08:00:00.0 | 2026-07-06T08:00:00.0 | 150 |  | 2025-10-20T08:00:00.0 | 1.10.4.3.5 | PRORATED | True | True | Task | True | b6b32276-92ad-f011-8312-3c219cc9efd1 | True | PRORATED | 86400 | 2026-07-03T17:00:00.0 | 2026-07-01T08:00:00.0 | True | 2026-07-03T17:00:00.0 | True | 150 | 5 | bcb32276-92ad-f011-8312-3c219cc9efd1 | 145 | 2 |  |  | 2026-07-01T08:00:00.0 |  | 137 94 150 FS |  | 2026-07-01T08:00:00.0 |  |
| 2026-07-01T08:00:00.0 | ed | P4 FMEA(QD4-076)(Board PE) | 1.10.4.3.6 | START_NO_EARLIER_THAN | True | 500 | 86400 | 86400 | 2026-07-01T08:00:00.0 | 2026-07-03T17:00:00.0 | 2026-07-01T08:00:00.0 | 2026-07-06T08:00:00.0 | 151 |  | 2025-10-20T08:00:00.0 | 1.10.4.3.6 | PRORATED | True | True | Task | True | b7b32276-92ad-f011-8312-3c219cc9efd1 | True | PRORATED | 86400 | 2026-07-03T17:00:00.0 | 2026-07-01T08:00:00.0 | True | 2026-07-03T17:00:00.0 | True | 151 | 5 | bcb32276-92ad-f011-8312-3c219cc9efd1 | 145 | 2 |  |  | 2026-07-01T08:00:00.0 |  | 138 94 151 FS |  | 2026-07-01T08:00:00.0 |  |
| 2026-06-29T08:00:00.0 | ed | PM Reports | 1.10.4.4 | START_NO_EARLIER_THAN |  | 500 | 57600 | 57600 | 2026-06-29T08:00:00.0 | 2026-06-30T17:00:00.0 | 2026-07-06T08:00:00.0 | 2026-07-08T08:00:00.0 | 152 | True | 2025-10-20T08:00:00.0 | 1.10.4.4 | PRORATED | True | True | Phase | True | b8b32276-92ad-f011-8312-3c219cc9efd1 | True | PRORATED | 57600 | 2026-06-30T17:00:00.0 | 2026-06-29T08:00:00.0 | True | 2026-06-30T17:00:00.0 | True | 152 | 4 | bcb32276-92ad-f011-8312-3c219cc9efd1 | 135 | 2 |  | 144000 | 2026-06-29T08:00:00.0 | 144000 |  | 144000 |  | 144000 |
| 2026-06-29T08:00:00.0 | ed | Risk Management Report(Final)(QD4-035)(PM) | 1.10.4.4.1 | START_NO_EARLIER_THAN |  | 500 | 57600 | 57600 | 2026-06-29T08:00:00.0 | 2026-06-30T17:00:00.0 | 2026-07-06T08:00:00.0 | 2026-07-08T08:00:00.0 | 153 |  | 2025-10-20T08:00:00.0 | 1.10.4.4.1 | PRORATED | True | True | Task | True | b9b32276-92ad-f011-8312-3c219cc9efd1 | True | PRORATED | 57600 | 2026-06-30T17:00:00.0 | 2026-06-29T08:00:00.0 | True | 2026-06-30T17:00:00.0 | True | 153 | 5 | bcb32276-92ad-f011-8312-3c219cc9efd1 | 152 | 2 |  | 144000 | 2026-06-29T08:00:00.0 | 144000 | 139 97 153 FS | 144000 | 2026-06-29T08:00:00.0 | 144000 |
| 2026-06-29T08:00:00.0 | ed | Usability Engineering File(QD4-103)(PM) | 1.10.4.4.2 | START_NO_EARLIER_THAN |  | 500 | 57600 | 57600 | 2026-06-29T08:00:00.0 | 2026-06-30T17:00:00.0 | 2026-07-06T08:00:00.0 | 2026-07-08T08:00:00.0 | 154 |  | 2025-10-20T08:00:00.0 | 1.10.4.4.2 | PRORATED | True | True | Task | True | bab32276-92ad-f011-8312-3c219cc9efd1 | True | PRORATED | 57600 | 2026-06-30T17:00:00.0 | 2026-06-29T08:00:00.0 | True | 2026-06-30T17:00:00.0 | True | 154 | 5 | bcb32276-92ad-f011-8312-3c219cc9efd1 | 152 | 2 |  | 144000 | 2026-06-29T08:00:00.0 | 144000 | 140 97 154 FS | 144000 | 2026-06-29T08:00:00.0 | 144000 |
